# 需求(再次修改)

Schedule from MS Project, 2017-09-28 to 2018-01-30, costs in ￥, A marks actual dates.

## Calendars

- 标准: Mon-Fri 08:00-12:00, 13:00-17:00; Sat-Sun off. Exceptions (off unless hours are given): 2017-11-01 to 2017-11-04 19:00-21:00, 2017-11-05 19:00-21:30, 2017-11-06 to 2018-01-31 19:00-21:00.

## Resources

| Resource | Rate |
| --- | --- |
| 金志超 | 30.97 |
| 韩佳鑫 | 30.97 |
| 林康 | 30.97 |
| 葛鑫志 | 30.97 |
| 胡泽宇 | 30.97 |
| 金志超林康 |  |

## Schedule

| ID | WBS | Task | Type | Duration | Start | Finish | Predecessors | Complete | Remaining | Total slack | Free slack | Constraint | Resources | Work | Actual work | Cost | Actual cost |
| --- | --- | --- | --- | --- | --- | --- | --- | --- | --- | --- | --- | --- | --- | --- | --- | --- | --- |
| 1 | 1 | **准备阶段** |  | 2d | 2017-09-28 08:00 A | 2017-09-29 17:00 A |  | 100% |  |  |  |  |  |  |  |  |  |
| 2 | 1.1 | 组建小组 |  | 1h | 2017-09-28 08:00 A | 2017-09-28 09:00 A |  | 100% |  |  |  | start no earlier than 2017-09-28 08:00 |  |  |  |  |  |
| 3 | 1.2 | 学习建立配置管理 |  | 4h | 2017-09-29 13:00 A | 2017-09-29 17:00 A |  | 100% |  |  |  | finish no earlier than 2017-09-29 17:00 |  |  |  |  |  |
| 4 | 2 | **计划阶段** |  | 15.19d | 2017-10-12 08:00 A | 2017-11-05 20:30 A |  | 100% |  |  |  |  |  | 28h | 28h | 867.16 | 867.16 |
| 5 | 2.1 | 任务下达 | milestone | 2h | 2017-10-12 08:00 A | 2017-10-12 10:00 A | 2 | 100% |  |  |  | start no earlier than 2017-10-12 08:00 |  |  |  |  |  |
| 6 | 2.2 | 小组例会1 |  | 0.5h | 2017-10-23 08:00 A | 2017-10-23 08:30 A |  | 100% |  |  |  | start no earlier than 2017-10-23 08:00 |  |  |  |  |  |
| 7 | 2.3 | 小组例会2 |  | 0.5h | 2017-10-26 08:00 A | 2017-10-26 08:30 A |  | 100% |  |  |  | start no earlier than 2017-10-26 08:00 |  |  |  |  |  |
| 8 | 2.4 | **编写项目需求计划** |  | 1.25d | 2017-10-27 08:00 A | 2017-10-30 10:00 A | 5 | 100% |  |  |  |  |  | 10h | 10h | 309.7 | 309.7 |
| 9 | 2.4.1 | 编写文档 |  | 2h | 2017-10-27 08:00 A | 2017-10-27 10:00 A |  | 100% |  |  |  | start no earlier than 2017-10-27 08:00 | 葛鑫志; 韩佳鑫 | 4h | 4h | 123.88 | 123.88 |
| 10 | 2.4.2 | OBS |  | 2h | 2017-10-27 08:00 A | 2017-10-27 10:00 A |  | 100% |  |  |  | start no earlier than 2017-10-27 08:00 | 金志超; 胡泽宇 | 4h | 4h | 123.88 | 123.88 |
| 11 | 2.4.3 | 甘特图、WBS |  | 2h | 2017-10-30 08:00 A | 2017-10-30 10:00 A |  | 100% |  |  |  | start no earlier than 2017-10-28 08:00 | 林康 | 2h | 2h | 61.94 | 61.94 |
| 12 | 2.4.4 | 提交需求工程计划 |  | 0.5h | 2017-10-30 08:00 A | 2017-10-30 08:30 A |  | 100% |  |  |  | start no earlier than 2017-10-29 08:00 |  |  |  |  |  |
| 13 | 2.5 | 小组例会3 |  | 0.5h | 2017-11-02 19:00 A | 2017-11-02 19:30 A |  | 100% |  |  |  | start no earlier than 2017-11-02 08:00 | 韩佳鑫; 金志超; 胡泽宇; 葛鑫志; 林康 | 2.5h | 2.5h | 77.43 | 77.43 |
| 14 | 2.6 | **项目章程** |  | 1.06d | 2017-10-27 08:00 A | 2017-10-30 08:30 A | 5 | 100% |  |  |  |  |  | 2h | 2h | 61.94 | 61.94 |
| 15 | 2.6.1 | 编写项目章程 |  | 1h | 2017-10-27 08:00 A | 2017-10-27 09:00 A |  | 100% |  |  |  | start no earlier than 2017-10-27 08:00 | 金志超; 胡泽宇 | 2h | 2h | 61.94 | 61.94 |
| 16 | 2.6.2 | 项目章程提交 |  | 0.5h | 2017-10-30 08:00 A | 2017-10-30 08:30 A |  | 100% |  |  |  | start no earlier than 2017-10-29 08:00 |  |  |  |  |  |
| 17 | 2.7 | QA计划 制作 | milestone | 1.5h | 2017-11-05 19:00 A | 2017-11-05 20:30 A | 16 | 100% |  |  |  | start no earlier than 2017-11-05 08:00 | 金志超 | 1.5h | 1.5h | 46.45 | 46.46 |
| 18 | 2.8 | **修改评审详解项目需求计划** |  | 2.75d | 2017-10-30 09:00 A | 2017-11-04 20:00 A | 8 | 100% |  |  |  |  |  | 12h | 12h | 371.64 | 371.64 |
| 19 | 2.8.1 | 修改需求工程计划 |  | 2h | 2017-10-30 09:00 A | 2017-10-30 11:00 A | 8 | 100% |  |  |  | start no earlier than 2017-10-30 08:00 | 韩佳鑫; 胡泽宇; 林康; 葛鑫志 | 8h | 8h | 247.76 | 247.76 |
| 20 | 3 | **需求阶段** |  | 14.25d? | 2017-11-04 20:00 A | 2017-12-31 19:30 | 21 | 40% | 8.48d? | 7.5d |  |  |  | 413.6h | 191.1h | 12,809.19 | 5,918.37 |
| 21 | 3.1 | 评审需求工程计划 | milestone | 1h | 2017-11-04 19:00 A | 2017-11-04 20:00 A | 19 | 100% |  |  |  | start no earlier than 2017-11-04 08:00 | 葛鑫志; 韩佳鑫; 胡泽宇; 林康 | 4h | 4h | 123.88 | 123.88 |
| 22 | 3.2 | **需求开发过程** |  | 10.94d? | 2017-11-04 20:00 A | 2017-12-17 21:00 |  | 51% | 5.35d? | 10.81d |  |  |  | 312.6h | 191.1h | 9,681.22 | 5,918.37 |
| 23 | 3.2.1 | **需求获取** |  | 7.5d | 2017-11-04 20:00 A | 2017-12-04 19:30 |  | 76% | 1.79d | 7.8d | 0d |  |  | 204.6h | 186.1h | 6,336.46 | 5,763.52 |
| 24 | 3.2.1.1 | **编写项目视图与范围** |  | 0.55d | 2017-11-04 20:00 A | 2017-11-06 19:56 A |  | 100% |  |  |  |  |  | 5.1h | 5.1h | 157.95 | 157.95 |
| 25 | 3.2.1.1.1 | 确定业务需求 |  | 0.1h | 2017-11-04 20:00 A | 2017-11-04 20:06 A |  | 100% |  |  |  | start no earlier than 2017-11-04 08:00 | 韩佳鑫 | 0.1h | 0.1h | 3.1 | 3.1 |
| 26 | 3.2.1.1.2 | 确定范围与限制 |  | 0.33h | 2017-11-04 20:06 A | 2017-11-04 20:26 A | 25 | 100% |  |  |  | start no earlier than 2017-10-30 08:00 | 韩佳鑫; 胡泽宇; 葛鑫志 | 1h | 1h | 30.97 | 30.97 |
| 27 | 3.2.1.1.3 | 确定业务背景 |  | 0.5h | 2017-11-04 20:26 A | 2017-11-04 20:56 A | 26 | 100% |  |  |  | start no earlier than 2017-10-31 08:00 | 韩佳鑫 | 0.5h | 0.5h | 15.49 | 15.49 |
| 28 | 3.2.1.1.4 | 绘制关联图 |  | 2h | 2017-11-04 20:56 A | 2017-11-05 20:56 A | 27 | 100% |  |  |  | start no earlier than 2017-10-31 08:00 | 葛鑫志 | 2h | 2h | 61.94 | 61.94 |
| 29 | 3.2.1.1.5 | 使用业务目标来做范围决策 |  | 0.5h | 2017-11-05 20:56 A | 2017-11-05 21:26 A | 28 | 100% |  |  |  | start no earlier than 2017-11-01 08:00 | 韩佳鑫 | 0.5h | 0.5h | 15.49 | 15.49 |
| 30 | 3.2.1.1.6 | 与教师客户的第一次访谈 |  | 1h | 2017-11-05 19:00 A | 2017-11-05 20:00 A |  | 100% |  |  |  | start no earlier than 2017-11-05 08:00 |  |  |  |  |  |
| 31 | 3.2.1.1.7 | 评估范围变更的影响 |  | 1h | 2017-11-05 21:26 A | 2017-11-06 19:56 A | 29 | 100% |  |  |  | start no earlier than 2017-11-01 08:00 | 胡泽宇 | 1h | 1h | 30.97 | 30.97 |
| 32 | 3.2.1.1.8 | 小组例会4 |  | 0.5h | 2017-11-05 08:00 A | 2017-11-05 19:30 A |  | 100% |  |  |  | start no earlier than 2017-11-05 08:00 |  |  |  |  |  |

| ID | WBS | Task | Duration | Start | Finish | Predecessors | Complete | Total slack | Free slack | Constraint | Resources | Work | Actual work | Cost | Actual cost |
| --- | --- | --- | --- | --- | --- | --- | --- | --- | --- | --- | --- | --- | --- | --- | --- |
| 33 | 3.2.1.2 | **确定需求开发过程** | 5.76d | 2017-11-06 19:56 A | 2017-11-29 20:00 A | 24 | 100% |  |  |  |  | 181h | 181h | 5,605.57 | 5,605.57 |
| 34 | 3.2.1.2.1 | 用户群分类 | 1h | 2017-11-06 19:56 A | 2017-11-06 20:56 A |  | 100% |  |  |  | 韩佳鑫; 葛鑫志; 胡泽宇 | 3h | 3h | 92.91 | 92.91 |
| 35 | 3.2.1.2.2 | 选择产品代表 | 1h | 2017-11-06 19:56 A | 2017-11-06 20:56 A |  | 100% |  |  | start no earlier than 2017-11-06 08:00 | 金志超; 韩佳鑫; 林康; 葛鑫志; 胡泽宇 | 5h | 5h | 154.85 | 154.85 |
| 36 | 3.2.1.2.3 | 建立核心队伍 | 0.5h | 2017-11-06 19:56 A | 2017-11-06 20:26 A |  | 100% |  |  | start no earlier than 2017-11-04 08:00 | 金志超; 韩佳鑫; 林康; 葛鑫志; 胡泽宇 | 2.5h | 2.5h | 77.43 | 77.43 |
| 37 | 3.2.1.2.4 | 需求获取技巧 | 0.5h | 2017-11-06 19:56 A | 2017-11-06 20:26 A |  | 100% |  |  | finish no earlier than 2017-11-05 17:00 | 胡泽宇 | 0.5h | 0.5h | 15.49 | 15.49 |
| 38 | 3.2.1.2.5 | 制定需求获取计划 | 1h | 2017-11-06 20:26 A | 2017-11-07 19:26 A | 37 | 100% |  |  | start no earlier than 2017-11-05 08:00 | 韩佳鑫 | 1h | 1h | 30.97 | 30.97 |
| 39 | 3.2.1.2.6 | 界面原型 | 33h | 2017-11-09 20:00 A | 2017-11-26 17:00 A |  | 100% |  |  | finish no earlier than 2017-11-12 17:00 | 林康; 金志超; 葛鑫志; 胡泽宇; 韩佳鑫 | 165h | 165h | 5,110.05 | 5,110.05 |
| 40 | 3.2.1.2.7 | 小组例会5 | 0.5h | 2017-11-12 08:00 A | 2017-11-12 19:30 A |  | 100% |  |  | start no earlier than 2017-11-11 08:00 |  |  |  |  |  |
| 41 | 3.2.1.2.8 | 小组例会6 | 0.5h | 2017-11-19 08:00 A | 2017-11-19 19:30 A | 44 | 100% |  |  |  |  |  |  |  |  |
| 42 | 3.2.1.2.9 | 小组例会7 | 0.5h | 2017-11-26 08:00 A | 2017-11-26 19:30 A | 50 | 100% |  |  | start no earlier than 2017-11-09 08:00 |  |  |  |  |  |
| 43 | 3.2.1.2.10 | 与教师客户的第二次访谈 | 1h | 2017-11-21 19:00 A | 2017-11-21 20:00 A |  | 100% |  |  | start no earlier than 2017-11-21 08:00 |  |  |  |  |  |
| 44 | 3.2.1.2.11 | 执行需求活动 | 1h | 2017-11-27 19:00 A | 2017-11-27 20:00 A |  | 100% |  |  | start no earlier than 2017-11-27 08:00 | 韩佳鑫 | 1h | 1h | 30.97 | 30.97 |
| 45 | 3.2.1.2.12 | 需求获取后的跟进 | 0.5h | 2017-11-27 19:00 A | 2017-11-27 19:30 A | 41 | 100% |  |  | start no earlier than 2017-11-27 08:00 | 胡泽宇 | 0.5h | 0.5h | 15.49 | 15.49 |
| 46 | 3.2.1.2.13 | 对客户的输入进行分类 | 0.5h | 2017-11-27 19:30 A | 2017-11-27 20:00 A | 45 | 100% |  |  | start no earlier than 2017-11-14 08:00 | 林康 | 0.5h | 0.5h | 15.49 | 15.49 |
| 47 | 3.2.1.2.14 | 与教师客户的第三次访谈 | 1h | 2017-11-28 19:00 A | 2017-11-28 20:00 A |  | 100% |  |  | start no earlier than 2017-11-28 08:00 |  |  |  |  |  |
| 48 | 3.2.1.2.15 | 假设的需求和隐晦的需求 | 1h | 2017-11-28 20:00 A | 2017-11-28 21:00 A | 47 | 100% |  |  | start no earlier than 2017-11-28 08:00 | 金志超 | 1h | 1h | 30.97 | 30.97 |
| 49 | 3.2.1.2.16 | 找出遗漏的需求 | 1h | 2017-11-29 19:00 A | 2017-11-29 20:00 A | 48 | 100% |  |  | start no earlier than 2017-11-04 19:00 | 金志超 | 1h | 1h | 30.97 | 30.97 |
| 50 | 3.2.1.3 | 确定使用实例 | 2h | 2017-11-29 19:00 | 2017-11-29 21:00 | 36 |  | 8.86d |  | start no earlier than 2017-11-29 08:00 | 葛鑫志 | 2h |  | 61.94 |  |
| 51 | 3.2.1.4 | **确定质量属性** | 0.25d | 2017-11-30 19:00 | 2017-12-01 17:00 | 17 |  | 8.61d |  |  |  | 8h |  | 247.76 |  |
| 52 | 3.2.1.4.1 | 以一个广泛的分类为起点 | 2h | 2017-11-30 19:00 | 2017-11-30 21:00 |  |  | 8.61d |  | start no earlier than 2017-11-30 08:00 | 金志超 | 2h |  | 61.94 |  |
| 53 | 3.2.1.4.2 | 精简列表 | 1h | 2017-11-30 20:00 | 2017-12-01 17:00 |  |  | 8.61d |  | finish no earlier than 2017-12-01 17:00 | 韩佳鑫 | 1h |  | 30.97 |  |
| 54 | 3.2.1.4.3 | 对属性进行排序 | 2h | 2017-11-30 19:00 | 2017-11-30 21:00 |  |  | 8.61d |  | start no earlier than 2017-11-30 08:00 | 葛鑫志 | 2h |  | 61.94 |  |
| 55 | 3.2.1.4.4 | 获取对每个属性的具体期望 | 1h | 2017-11-30 20:00 | 2017-12-01 17:00 |  |  | 8.61d |  | finish no earlier than 2017-12-01 17:00 | 胡泽宇 | 1h |  | 30.97 |  |
| 56 | 3.2.1.4.5 | 具体指定结构良好的质量需求 | 2h | 2017-11-30 19:00 | 2017-11-30 21:00 |  |  | 8.61d |  | start no earlier than 2017-11-30 08:00 | 林康 | 2h |  | 61.94 |  |
| 57 | 3.2.1.5 | 检查问题报告 | 2h | 2017-12-02 19:00 | 2017-12-03 17:00 |  |  | 8.11d |  | finish no earlier than 2017-12-03 17:00 | 胡泽宇 | 2h |  | 61.94 |  |
| 58 | 3.2.1.6 | 需求重用 | 1.5h | 2017-12-02 19:00 | 2017-12-02 20:30 |  |  | 8.17d |  | start no earlier than 2017-12-02 08:00 | 金志超 | 1.5h |  | 46.45 |  |
| 59 | 3.2.1.7 | 小组例会8 | 0.5h | 2017-12-03 08:00 A | 2017-12-03 19:30 A |  | 100% |  |  | start no earlier than 2017-11-20 08:00 |  |  |  |  |  |
| 60 | 3.2.1.8 | 召开应用程序开发联系会议（JAD） | 1.5h | 2017-12-03 19:00 | 2017-12-03 20:30 | 42 |  | 7.8d | 0d | start no earlier than 2017-12-03 08:00 | 金志超; 林康 | 3h |  | 92.91 |  |
| 61 | 3.2.1.9 | 分析用户工作流程 | 1h | 2017-12-03 20:30 | 2017-12-04 19:30 | 60 |  | 7.8d |  | finish no earlier than 2017-12-04 17:00 | 韩佳鑫; 胡泽宇 | 2h |  | 61.94 |  |
| 62 | 3.2.1.10 | 绘制关联图 | 1h | 2017-12-01 08:00 A | 2017-12-01 20:00 A |  | 100% |  |  | start no earlier than 2017-11-13 08:00 | 葛鑫志; 胡泽宇 | 2h | 2h | 61.94 | 61.94 |
| 63 | 3.2.1.11 | 创建开发原型 | 2h? | 2017-12-01 08:00 A | 2017-12-03 19:30 A | 62 | 100% |  |  | start no earlier than 2017-11-14 08:00 | 林康 | 2h | 2h | 61.94 | 61.94 |

| ID | WBS | Task | Type | Duration | Start | Finish | Predecessors | Complete | Remaining | Total slack | Free slack | Constraint | Resources | Work | Actual work | Cost | Actual cost |
| --- | --- | --- | --- | --- | --- | --- | --- | --- | --- | --- | --- | --- | --- | --- | --- | --- | --- |
| 64 | 3.2.2 | **需求分析** |  | 2.56d? | 2017-11-26 19:00 A | 2017-12-06 19:30 | 23 | 41% | 1.51d? | 8.81d | 0d |  |  | 12h | 5h | 371.64 | 154.85 |
| 65 | 3.2.2.1 | 分析可行性 |  | 1h? | 2017-12-01 08:00 A | 2017-12-01 20:00 A | 63 | 100% |  |  |  | start no earlier than 2017-11-15 08:00 | 韩佳鑫 | 1h | 1h | 30.97 | 30.97 |
| 66 | 3.2.2.2 | 小组例会9 |  | 0.5h | 2017-11-26 19:00 A | 2017-11-26 19:30 A |  | 100% |  |  |  | start no earlier than 2017-11-23 08:00 |  |  |  |  |  |
| 67 | 3.2.2.3 | 确定需求优先 |  | 1h? | 2017-12-04 19:30 | 2017-12-04 20:30 | 65 |  |  | 8.81d | 0d | start no earlier than 2017-12-02 08:00 | 葛鑫志 | 1h |  | 30.97 |  |
| 68 | 3.2.2.4 | 为需求建立模型 |  | 2h? | 2017-12-04 20:30 | 2017-12-05 20:30 | 67 |  |  | 8.81d | 0d | start no earlier than 2017-11-17 08:00 | 林康 | 2h |  | 61.94 |  |
| 69 | 3.2.2.5 | 编写数据字典 |  | 1h? | 2017-12-05 20:30 | 2017-12-06 19:30 | 68 |  |  | 8.81d |  | start no earlier than 2017-11-18 08:00 | 金志超; 韩佳鑫 | 2h |  | 61.94 |  |
| 70 | 3.2.2.6 | 小组例会10 |  | 0.5h | 2017-12-04 19:30 | 2017-12-04 20:00 |  |  |  | 9.25d |  | start no earlier than 2017-11-26 08:00 |  |  |  |  |  |
| 71 | 3.2.2.7 | 应用质量功能调配 |  | 2h? | 2017-12-04 19:30 | 2017-12-05 19:30 |  |  |  | 9.06d |  | start no earlier than 2017-11-26 08:00 | 胡泽宇 | 2h |  | 61.94 |  |
| 72 | 3.2.3 | **需求规格说明** |  | 1.06d? | 2017-12-06 19:30 | 2017-12-10 20:00 | 64 |  |  | 8.81d |  |  |  | 36h |  | 1,114.92 |  |
| 73 | 3.2.3.1 | 采用软件需求规格说明模板 |  | 2h | 2017-12-06 19:30 | 2017-12-07 19:30 |  |  |  | 13d | 0d | start no earlier than 2017-11-20 08:00 | 葛鑫志; 胡泽宇 | 4h |  | 123.88 |  |
| 74 | 3.2.3.2 | 指明需求来源 |  | 2h? | 2017-12-07 19:30 | 2017-12-08 19:30 | 73 |  |  | 13d | 0d | start no earlier than 2017-11-21 08:00 | 金志超; 韩佳鑫 | 4h |  | 123.88 |  |
| 75 | 3.2.3.3 | 小组例会11 |  | 0.5h | 2017-12-06 19:30 | 2017-12-06 20:00 |  |  |  | 13.69d |  | start no earlier than 2017-11-29 08:00 |  |  |  |  |  |
| 76 | 3.2.3.4 | 为每一项需求注上标号 |  | 2h | 2017-12-08 19:30 | 2017-12-09 19:30 | 74 |  |  | 13d |  | start no earlier than 2017-11-23 08:00 | 胡泽宇 | 2h |  | 61.94 |  |
| 77 | 3.2.3.5 | 小组例会12 |  | 0.5h | 2017-12-06 19:30 | 2017-12-06 20:00 |  |  |  | 13.69d |  | start no earlier than 2017-12-01 08:00 |  |  |  |  |  |
| 78 | 3.2.3.6 | 记录业务规范 |  | 2h? | 2017-12-06 19:30 | 2017-12-07 19:30 |  |  |  | 8.81d | 0d | finish no earlier than 2017-12-06 17:00 | 金志超; 韩佳鑫 | 4h |  | 123.88 |  |
| 79 | 3.2.3.7 | 小组例会13 |  | 0.5h | 2017-12-06 19:30 | 2017-12-06 20:00 |  |  |  | 13.69d |  | start no earlier than 2017-12-05 08:00 |  |  |  |  |  |
| 80 | 3.2.3.8 | 小组例会14 |  | 0.5h | 2017-12-06 19:30 | 2017-12-06 20:00 |  |  |  | 13.69d |  | start no earlier than 2017-12-06 08:00 |  |  |  |  |  |
| 81 | 3.2.3.9 | 创建需求跟踪能力矩阵 |  | 2h? | 2017-12-07 19:30 | 2017-12-08 19:30 | 78 |  |  | 8.81d | 0d | finish no earlier than 2017-12-04 17:00 | 林康; 葛鑫志; 胡泽宇 | 6h |  | 185.82 |  |
| 82 | 3.2.3.10 | 小组例会15 |  | 0.5h | 2017-12-07 19:00 | 2017-12-07 19:30 |  |  |  | 13.5d |  | start no earlier than 2017-12-07 08:00 |  |  |  |  |  |
| 83 | 3.2.3.11 | 写软件需求规格说明书 | milestone | 4h | 2017-12-08 19:30 | 2017-12-10 19:30 | 81 |  |  | 8.81d | 0d | start no earlier than 2017-12-07 08:00 | 金志超; 韩佳鑫; 林康; 葛鑫志 | 16h |  | 495.52 |  |
| 84 | 3.2.3.12 | 小组例会16 |  | 0.5h | 2017-12-10 19:00 | 2017-12-10 19:30 |  |  |  | 12.75d |  | start no earlier than 2017-12-10 08:00 |  |  |  |  |  |
| 85 | 3.2.3.13 | 提交软件需求规格说明（草稿） |  | 0.5h | 2017-12-10 19:30 | 2017-12-10 20:00 | 83 |  |  | 12.69d |  | start no earlier than 2017-12-10 08:00 |  |  |  |  |  |
| 86 | 3.2.4 | **需求规格审核** |  | 1.75d? | 2017-12-11 19:00 | 2017-12-17 21:00 | 64 |  |  | 7.88d | 0d |  |  | 60h |  | 1,858.2 |  |
| 87 | 3.2.4.1 | 小组例会17 |  | 0.5h | 2017-12-11 19:00 | 2017-12-11 19:30 |  |  |  | 9.56d |  | start no earlier than 2017-12-11 08:00 |  |  |  |  |  |
| 88 | 3.2.4.2 | 审查需求文档 |  | 3h? | 2017-12-11 19:00 | 2017-12-12 20:00 | 83 |  |  | 8.62d | 0.12d | start no earlier than 2017-12-11 08:00 | 金志超; 韩佳鑫; 林康; 葛鑫志; 胡泽宇 | 15h |  | 464.55 |  |
| 89 | 3.2.4.3 | 编写测试用例 |  | 3h? | 2017-12-13 19:00 | 2017-12-14 20:00 | 88 |  |  | 8.5d | 0.12d | start no earlier than 2017-12-13 08:00 | 金志超; 韩佳鑫; 林康; 葛鑫志; 胡泽宇 | 15h |  | 464.55 |  |
| 90 | 3.2.4.4 | 编写用户手册 |  | 2h? | 2017-12-15 19:00 | 2017-12-15 21:00 | 89 |  |  | 8.38d |  | start no earlier than 2017-12-15 08:00 | 金志超; 韩佳鑫; 林康; 葛鑫志; 胡泽宇 | 10h |  | 309.7 |  |
| 91 | 3.2.4.5 | 小组例会18 |  | 0.5h | 2017-12-15 19:00 | 2017-12-15 19:30 |  |  |  | 8.06d | 0.19d | start no earlier than 2017-12-15 08:00 |  |  |  |  |  |
| 92 | 3.2.4.6 | 确定合格的标准 |  | 2h | 2017-12-16 19:00 | 2017-12-16 21:00 | 91 |  |  | 7.88d | 0d | start no earlier than 2017-12-16 08:00 | 金志超; 韩佳鑫; 林康; 葛鑫志; 胡泽宇 | 10h |  | 309.7 |  |
| 93 | 3.2.4.7 | 模拟需求 |  | 2h | 2017-12-17 19:00 | 2017-12-17 21:00 | 92 |  |  | 7.88d |  | start no earlier than 2017-12-17 08:00 | 金志超; 韩佳鑫; 林康; 葛鑫志; 胡泽宇 | 10h |  | 309.7 |  |

| ID | WBS | Task | Type | Duration | Start | Finish | Predecessors | Total slack | Free slack | Constraint | Resources | Work | Cost |
| --- | --- | --- | --- | --- | --- | --- | --- | --- | --- | --- | --- | --- | --- |
| 94 | 3.3 | **需求管理过程** |  | 3.31d? | 2017-12-18 19:00 | 2017-12-31 19:30 | 86 | 7.5d |  |  |  | 101h | 3,127.97 |
| 95 | 3.3.1 | 使用需求管理工具 |  | 3h? | 2017-12-18 19:00 | 2017-12-19 20:00 |  | 7.88d | 0d | start no earlier than 2017-12-18 08:00 | 金志超; 韩佳鑫; 林康; 葛鑫志; 胡泽宇 | 15h | 464.55 |
| 96 | 3.3.2 | 小组例会19 |  | 0.5h | 2017-12-19 19:00 | 2017-12-19 19:30 |  | 10.5d |  | start no earlier than 2017-12-19 08:00 |  |  |  |
| 97 | 3.3.3 | 确定变更控制过程 |  | 3h? | 2017-12-19 20:00 | 2017-12-20 21:00 | 95 | 7.88d | 0d | start no earlier than 2017-12-19 08:00 | 金志超; 韩佳鑫; 林康; 葛鑫志; 胡泽宇 | 15h | 464.55 |
| 98 | 3.3.4 | 建立变更控制委员会 |  | 1h | 2017-12-21 19:00 | 2017-12-21 20:00 | 97 | 7.88d | 0d | start no earlier than 2017-12-20 08:00 | 金志超; 韩佳鑫; 林康; 葛鑫志; 胡泽宇 | 5h | 154.85 |
| 99 | 3.3.5 | 进行变更影响分析 |  | 3h? | 2017-12-21 20:00 | 2017-12-22 21:00 | 98 | 7.88d | 0d | start no earlier than 2017-12-21 08:00 | 金志超; 韩佳鑫; 林康; 葛鑫志; 胡泽宇 | 15h | 464.55 |
| 100 | 3.3.6 | 小组例会20 |  | 0.5h | 2017-12-22 19:00 | 2017-12-22 19:30 |  | 9.75d |  | start no earlier than 2017-12-22 08:00 |  |  |  |
| 101 | 3.3.7 | **编写需求文档的基准版本和控制版本** |  | 0.31d | 2017-12-23 19:00 | 2017-12-24 19:30 | 99 | 7.88d | 0.19d |  |  | 10h | 309.7 |
| 102 | 3.3.7.1 | 编写需求变更文档 |  | 2h | 2017-12-23 19:00 | 2017-12-23 21:00 |  | 7.88d | 0d | start no earlier than 2017-12-23 08:00 | 金志超; 韩佳鑫; 林康; 葛鑫志; 胡泽宇 | 10h | 309.7 |
| 103 | 3.3.7.2 | 提交需求变更文档 |  | 0.5h | 2017-12-24 19:00 | 2017-12-24 19:30 | 102 | 7.88d |  | start no earlier than 2017-12-24 08:00 |  |  |  |
| 104 | 3.3.8 | 跟踪每一项变更 |  | 2h | 2017-12-25 19:00 | 2017-12-25 21:00 | 101 | 7.81d | 0d | start no earlier than 2017-12-25 08:00 | 林康; 葛鑫志; 胡泽宇 | 6h | 185.82 |
| 105 | 3.3.9 | 维护变更历史记录 |  | 3h | 2017-12-26 19:00 | 2017-12-27 20:00 | 104 | 7.81d | 0d | start no earlier than 2017-12-26 08:00 | 金志超; 韩佳鑫 | 6h | 185.82 |
| 106 | 3.3.10 | 跟踪需求状态 |  | 3h | 2017-12-27 20:00 | 2017-12-28 21:00 | 105 | 7.81d | 0d | start no earlier than 2017-12-27 08:00 | 金志超; 韩佳鑫; 林康; 葛鑫志; 胡泽宇 | 15h | 464.55 |
| 107 | 3.3.11 | 小组例会21 |  | 0.5h | 2017-12-28 19:00 | 2017-12-28 19:30 |  | 8.25d |  | start no earlier than 2017-12-28 08:00 |  |  |  |
| 108 | 3.3.12 | 衡量需求稳定性 |  | 2h | 2017-12-29 19:00 | 2017-12-29 21:00 | 106 | 7.81d |  | start no earlier than 2017-12-28 08:00 | 葛鑫志; 韩佳鑫; 胡泽宇 | 6h | 185.82 |
| 109 | 3.3.13 | 软件需求变更文档修改及评审 | milestone | 4h | 2017-12-29 19:00 | 2017-12-31 17:00 | 101 | 6.69d | 6.5d | finish no earlier than 2017-12-31 17:00 | 金志超; 林康 | 8h | 247.76 |
| 110 | 3.3.14 | 小组例会22 |  | 0.5h | 2017-12-31 19:00 | 2017-12-31 19:30 |  | 7.5d |  | start no earlier than 2017-12-31 08:00 |  |  |  |
| 111 | 4 | **项目总结** |  | 1.06d? | 2018-01-26 19:00 | 2018-01-30 19:30 | 109 | 0d |  |  |  | 30h | 929.1 |
| 112 | 4.1 | 小组例会23 |  | 0.5h | 2018-01-26 19:00 | 2018-01-26 19:30 |  | 0.19d | 0d | start no earlier than 2018-01-26 08:00 |  |  |  |
| 113 | 4.2 | 项目总结报告 | milestone | 6h? | 2018-01-26 19:30 | 2018-01-29 19:30 | 112 | 0.19d |  |  | 韩佳鑫; 林康; 葛鑫志; 胡泽宇; 金志超 | 30h | 929.1 |
| 114 | 4.3 | 小组总结会议 |  | 0.5h | 2018-01-30 19:00 | 2018-01-30 19:30 | 113 | 0d |  | start no earlier than 2018-01-30 08:00 |  |  |  |
