# 需求(再次修改)

Schedule from MS Project, 2017-09-28 to 2018-01-30, costs in ￥, A marks actual dates.

## Calendars

- 标准: Mon-Fri 08:00-12:00, 13:00-17:00; Sat-Sun off. Exceptions (off unless hours are given): 2017-11-01 to 2017-11-04 19:00-21:00, 2017-11-05 19:00-21:30, 2017-11-06 to 2018-01-31 19:00-21:00.

## Resources

| Resource | Rate |
| --- | --- |
| 金志超 | 30.97 |
| 韩佳鑫 | 30.97 |
| 林康 | 30.97 |
| 葛鑫志 | 30.97 |
| 胡泽宇 | 30.97 |

## Schedule

| ID | WBS | Task | Type | Duration | Start | Finish | Predecessors | Complete | Remaining | Total slack | Free slack | Constraint | Resources | Work | Actual work | Cost | Actual cost |
| --- | --- | --- | --- | --- | --- | --- | --- | --- | --- | --- | --- | --- | --- | --- | --- | --- | --- |
| 1 | 1 | **准备阶段** |  | 2d | 2017-09-28 08:00 A | 2017-09-29 17:00 A |  | 100% |  |  |  |  |  |  |  |  |  |
| 2 | 1.1 | 组建小组 |  | 1h | 2017-09-28 08:00 A | 2017-09-28 09:00 A |  | 100% |  |  |  | start no earlier than 2017-09-28 08:00 |  |  |  |  |  |
| 3 | 1.2 | 学习建立配置管理 |  | 4h | 2017-09-29 13:00 A | 2017-09-29 17:00 A |  | 100% |  |  |  | finish no earlier than 2017-09-29 17:00 |  |  |  |  |  |
| 4 | 2 | **计划阶段** |  | 18.06d | 2017-10-12 08:00 A | 2017-11-16 21:00 |  | 74% | 4.78d | 18.56d |  |  |  | 18h | 12.5h | 557.46 | 387.13 |
| 5 | 2.1 | 任务下达 | milestone | 2h | 2017-10-12 08:00 A | 2017-10-12 10:00 A | 2 | 100% |  |  |  | start no earlier than 2017-10-12 08:00 |  |  |  |  |  |
| 6 | 2.2 | 小组例会1 |  | 0.5h | 2017-10-23 08:00 A | 2017-10-23 08:30 A |  | 100% |  |  |  | start no earlier than 2017-10-23 08:00 |  |  |  |  |  |
| 7 | 2.3 | 小组例会2 |  | 0.5h | 2017-10-26 08:00 A | 2017-10-26 08:30 A |  | 100% |  |  |  | start no earlier than 2017-10-26 08:00 |  |  |  |  |  |
| 8 | 2.4 | **编写项目需求计划** |  | 1.12d | 2017-10-27 08:00 A | 2017-10-30 09:00 A | 5 | 100% |  |  |  |  |  | 7h | 7h | 216.79 | 216.79 |
| 9 | 2.4.1 | 编写文档 |  | 2h | 2017-10-27 08:00 A | 2017-10-27 10:00 A |  | 100% |  |  |  | start no earlier than 2017-10-27 08:00 | 葛鑫志; 胡泽宇 | 4h | 4h | 123.88 | 123.88 |
| 10 | 2.4.2 | WBS |  | 2h | 2017-10-27 08:00 A | 2017-10-27 10:00 A |  | 100% |  |  |  | start no earlier than 2017-10-27 08:00 | 林康 | 2h | 2h | 61.94 | 61.94 |
| 11 | 2.4.3 | 甘特图 |  | 1h | 2017-10-30 08:00 A | 2017-10-30 09:00 A |  | 100% |  |  |  | start no earlier than 2017-10-28 08:00 | 林康 | 1h | 1h | 30.97 | 30.97 |
| 12 | 2.4.4 | 提交需求工程计划 |  | 1h | 2017-10-30 08:00 A | 2017-10-30 09:00 A |  | 100% |  |  |  | start no earlier than 2017-10-29 08:00 |  |  |  |  |  |
| 13 | 2.5 | 小组例会3 |  | 0.5h | 2017-11-02 19:00 A | 2017-11-02 19:30 A |  | 100% |  |  |  | start no earlier than 2017-11-02 08:00 |  |  |  |  |  |
| 14 | 2.6 | **项目章程** |  | 1.06d | 2017-10-27 08:00 A | 2017-10-30 08:30 A | 5 | 100% |  |  |  |  |  | 1.5h | 1.5h | 46.45 | 46.45 |
| 15 | 2.6.1 | 编写项目章程 |  | 1.5h | 2017-10-27 08:00 A | 2017-10-27 09:30 A |  | 100% |  |  |  | start no earlier than 2017-10-27 08:00 | 金志超 | 1.5h | 1.5h | 46.45 | 46.45 |
| 16 | 2.6.2 | 项目章程提交 |  | 0.5h | 2017-10-30 08:00 A | 2017-10-30 08:30 A |  | 100% |  |  |  | start no earlier than 2017-10-29 08:00 |  |  |  |  |  |
| 17 | 2.7 | QA计划 制作 | milestone | 1.5h | 2017-11-05 19:00 | 2017-11-05 20:30 | 5 |  |  | 9.75d | 1.12d | start no earlier than 2017-11-05 08:00 | 金志超 | 1.5h |  | 46.45 |  |
| 18 | 2.8 | **修改评审详解项目需求计划** |  | 5.94d | 2017-10-30 09:00 A | 2017-11-16 21:00 | 8 | 25% | 4.45d | 18.56d |  |  |  | 8h | 4h | 247.76 | 123.88 |
| 19 | 2.8.1 | 修改需求工程计划 | milestone | 1h | 2017-10-30 09:00 A | 2017-10-30 10:00 A | 8 | 100% |  |  |  | start no earlier than 2017-10-30 08:00 | 韩佳鑫; 胡泽宇; 林康; 葛鑫志 | 4h | 4h | 123.88 | 123.88 |
| 20 | 2.8.2 | 评审需求工程计划 | milestone | 1h | 2017-11-04 19:00 | 2017-11-04 20:00 | 19 |  |  | 21.5d | 2.94d | start no earlier than 2017-11-04 08:00 | 葛鑫志; 韩佳鑫; 胡泽宇; 林康 | 4h |  | 123.88 |  |
| 21 | 2.8.3 | 需求工程计划详解 | milestone | 2h | 2017-11-16 19:00 | 2017-11-16 21:00 | 20 |  |  | 18.56d |  | start no earlier than 2017-11-16 08:00 |  |  |  |  |  |
| 22 | 3 | **需求阶段** |  | 17.31d? | 2017-10-30 08:00 | 2017-12-31 21:00 |  |  |  | 7.31d |  |  |  | 534h |  | 16,537.98 |  |
| 23 | 3.1 | **需求开发过程** |  | 13.81d? | 2017-10-30 08:00 | 2017-12-17 21:00 |  |  |  | 10.81d |  |  |  | 404h |  | 12,511.88 |  |
| 24 | 3.1.1 | **需求获取** |  | 5.06d? | 2017-10-30 08:00 | 2017-11-12 21:00 |  |  |  | 8.62d | 0d |  |  | 84h |  | 2,601.48 |  |
| 25 | 3.1.1.1 | **编写项目视图与范围** |  | 2.19d | 2017-10-30 08:00 | 2017-11-01 20:30 |  |  |  | 10.06d | 0.06d |  |  | 7.5h |  | 232.28 |  |
| 26 | 3.1.1.1.1 | 确定业务需求 |  | 1h | 2017-10-30 08:00 | 2017-10-30 09:00 |  |  |  | 11.88d |  | start no earlier than 2017-10-30 08:00 | 金志超 | 1h |  | 30.97 |  |
| 27 | 3.1.1.1.2 | 确定范围与限制 |  | 3h | 2017-10-30 09:00 | 2017-10-30 12:00 | 26 |  |  | 11.31d | 0.5d | start no earlier than 2017-10-30 08:00 | 金志超 | 3h |  | 92.91 |  |
| 28 | 3.1.1.1.3 | 确定业务背景 |  | 0.5h | 2017-10-31 08:00 | 2017-10-31 08:30 | 27 |  |  | 10.94d |  | start no earlier than 2017-10-31 08:00 | 胡泽宇 | 0.5h |  | 15.49 |  |
| 29 | 3.1.1.1.4 | 绘制关联图 |  | 1.5h | 2017-10-31 08:30 | 2017-10-31 10:00 | 28 |  |  | 10.81d | 0.75d | start no earlier than 2017-10-31 08:00 | 林康 | 1.5h |  | 46.45 |  |
| 30 | 3.1.1.1.5 | 使用业务目标来做范围决策 |  | 0.5h | 2017-11-01 19:00 | 2017-11-01 19:30 | 29 |  |  | 10.06d | 0d | start no earlier than 2017-11-01 08:00 | 韩佳鑫 | 0.5h |  | 15.49 |  |
| 31 | 3.1.1.1.6 | 评估范围变更的影响 |  | 1h | 2017-11-01 19:30 | 2017-11-01 20:30 | 30 |  |  | 9.81d |  | start no earlier than 2017-11-01 08:00 | 金志超 | 1h |  | 30.97 |  |

| ID | WBS | Task | Duration | Start | Finish | Predecessors | Total slack | Free slack | Constraint | Resources | Work | Cost |
| --- | --- | --- | --- | --- | --- | --- | --- | --- | --- | --- | --- | --- |
| 32 | 3.1.1.2 | **确定需求开发过程** | 0.75d | 2017-11-02 19:00 | 2017-11-04 21:00 | 25 | 10d | 0d |  |  | 6h | 185.82 |
| 33 | 3.1.1.2.1 | 需求获取技巧 | 0.5h | 2017-11-02 19:00 | 2017-11-02 19:30 |  | 9.75d | 0d | start no earlier than 2017-11-02 08:00 | 金志超 | 0.5h | 15.49 |
| 34 | 3.1.1.2.2 | 制定需求获取计划 | 1.5h | 2017-11-02 19:30 | 2017-11-02 21:00 | 33 | 9.75d | 0d | start no earlier than 2017-11-02 19:00 | 葛鑫志 | 1.5h | 46.45 |
| 35 | 3.1.1.2.3 | 执行需求活动 | 1h | 2017-11-03 19:00 | 2017-11-03 20:00 | 34 | 9.75d | 0d | start no earlier than 2017-11-02 20:30 | 韩佳鑫 | 1h | 30.97 |
| 36 | 3.1.1.2.4 | 需求获取后的跟进 | 0.5h | 2017-11-03 20:00 | 2017-11-03 20:30 | 35 | 9.75d | 0d | start no earlier than 2017-11-03 19:00 | 胡泽宇 | 0.5h | 15.49 |
| 37 | 3.1.1.2.5 | 对客户的输入进行分类 | 0.5h | 2017-11-03 20:30 | 2017-11-03 21:00 | 36 | 9.75d | 0d | start no earlier than 2017-11-03 19:30 | 林康 | 0.5h | 15.49 |
| 38 | 3.1.1.2.6 | 假设的需求和隐晦的需求 | 1h | 2017-11-04 19:00 | 2017-11-04 20:00 | 37 | 9.75d | 0d | start no earlier than 2017-11-04 08:00 | 金志超 | 1h | 30.97 |
| 39 | 3.1.1.2.7 | 找出遗漏的需求 | 1h | 2017-11-04 20:00 | 2017-11-04 21:00 | 38 | 9.75d | 0.31d | start no earlier than 2017-11-04 19:00 | 金志超 | 1h | 30.97 |
| 40 | 3.1.1.3 | 用户群分类 | 1h | 2017-11-05 19:00 | 2017-11-05 20:00 | 32 | 10.56d |  |  | 韩佳鑫; 葛鑫志; 胡泽宇 | 3h | 92.91 |
| 41 | 3.1.1.4 | 小组例会4 | 0.5h | 2017-11-05 19:00 | 2017-11-05 19:30 |  | 10.62d |  | start no earlier than 2017-11-05 08:00 |  |  |  |
| 42 | 3.1.1.5 | 选择产品代表 | 1h | 2017-11-06 19:00 | 2017-11-06 20:00 | 39 | 9.44d | 0d | start no earlier than 2017-11-06 08:00 | 金志超; 韩佳鑫; 林康; 葛鑫志; 胡泽宇 | 5h | 154.85 |
| 43 | 3.1.1.6 | 建立核心队伍 | 0.5h | 2017-11-06 20:00 | 2017-11-06 20:30 | 42 | 9.44d | 0.06d | start no earlier than 2017-11-04 08:00 | 金志超; 韩佳鑫; 林康; 葛鑫志; 胡泽宇 | 2.5h | 77.43 |
| 44 | 3.1.1.7 | 确定使用实例 | 2.5h | 2017-11-07 19:00 | 2017-11-08 19:30 | 43 | 9.38d | 0d | start no earlier than 2017-11-07 08:00 | 金志超; 韩佳鑫; 林康; 葛鑫志; 胡泽宇 | 12.5h | 387.13 |
| 45 | 3.1.1.8 | 召开应用程序开发联系会议（JAD） | 1.5h | 2017-11-08 19:30 | 2017-11-08 21:00 | 44 | 9.38d | 0d | start no earlier than 2017-11-05 08:00 | 金志超; 韩佳鑫; 林康; 葛鑫志; 胡泽宇 | 7.5h | 232.28 |
| 46 | 3.1.1.9 | 小组例会5 | 0.5h? | 2017-11-09 19:00 | 2017-11-09 19:30 |  | 9.56d |  | start no earlier than 2017-11-09 08:00 |  |  |  |
| 47 | 3.1.1.10 | 分析用户工作流程 | 2h | 2017-11-09 19:00 | 2017-11-09 21:00 | 45 | 9.38d |  | start no earlier than 2017-11-06 08:00 | 金志超; 韩佳鑫; 林康; 葛鑫志; 胡泽宇 | 10h | 309.7 |
| 48 | 3.1.1.11 | **确定质量属性** | 0.5d | 2017-11-10 19:00 | 2017-11-11 21:00 | 17 | 8.62d | 0d |  |  | 20h | 619.4 |
| 49 | 3.1.1.11.1 | 以一个广泛的分类为起点 | 0.5h | 2017-11-10 19:00 | 2017-11-10 19:30 |  | 8.62d | 0d | start no earlier than 2017-11-10 08:00 | 金志超; 韩佳鑫; 林康; 葛鑫志; 胡泽宇 | 2.5h | 77.43 |
| 50 | 3.1.1.11.2 | 精简列表 | 1h | 2017-11-10 19:30 | 2017-11-10 20:30 | 49 | 8.62d | 0d | start no earlier than 2017-11-09 08:00 | 金志超; 韩佳鑫; 林康; 葛鑫志; 胡泽宇 | 5h | 154.85 |
| 51 | 3.1.1.11.3 | 对属性进行排序 | 0.5h | 2017-11-10 20:30 | 2017-11-10 21:00 | 50 | 8.62d | 0d | start no earlier than 2017-11-09 08:00 | 金志超; 韩佳鑫; 林康; 葛鑫志; 胡泽宇 | 2.5h | 77.43 |
| 52 | 3.1.1.11.4 | 获取对每个属性的具体期望 | 1h | 2017-11-11 19:00 | 2017-11-11 20:00 | 51 | 8.62d | 0d | start no earlier than 2017-11-11 08:00 | 金志超; 韩佳鑫; 林康; 葛鑫志; 胡泽宇 | 5h | 154.85 |
| 53 | 3.1.1.11.5 | 具体指定结构良好的质量需求 | 1h | 2017-11-11 20:00 | 2017-11-11 21:00 | 52 | 8.62d |  | start no earlier than 2017-11-11 08:00 | 金志超; 韩佳鑫; 林康; 葛鑫志; 胡泽宇 | 5h | 154.85 |
| 54 | 3.1.1.12 | 检查问题报告 | 0.5h | 2017-11-12 19:00 | 2017-11-12 19:30 | 48 | 8.62d | 0d | start no earlier than 2017-11-07 08:00 | 金志超; 韩佳鑫; 林康; 葛鑫志; 胡泽宇 | 2.5h | 77.43 |
| 55 | 3.1.1.13 | 需求重用 | 1.5h | 2017-11-12 19:30 | 2017-11-12 21:00 | 54 | 8.62d |  | finish no earlier than 2017-11-09 17:00 | 金志超; 韩佳鑫; 林康; 葛鑫志; 胡泽宇 | 7.5h | 232.28 |
| 56 | 3.1.1.14 | 小组例会6 | 0.5h | 2017-11-12 19:00 | 2017-11-12 19:30 |  | 8.81d | 1.69d | start no earlier than 2017-11-12 08:00 |  |  |  |

| ID | WBS | Task | Type | Duration | Start | Finish | Predecessors | Total slack | Free slack | Constraint | Resources | Work | Cost |
| --- | --- | --- | --- | --- | --- | --- | --- | --- | --- | --- | --- | --- | --- |
| 57 | 3.1.2 | **需求分析** |  | 1.75d? | 2017-11-13 19:00 | 2017-11-19 21:00 | 24 | 8.62d | 0d |  |  | 70h | 2,167.9 |
| 58 | 3.1.2.1 | 绘制关联图 |  | 2h | 2017-11-13 19:00 | 2017-11-13 21:00 |  | 8.62d | 0d | start no earlier than 2017-11-13 08:00 | 金志超; 韩佳鑫; 林康; 葛鑫志; 胡泽宇 | 10h | 309.7 |
| 59 | 3.1.2.2 | 创建开发原型 |  | 2h? | 2017-11-14 19:00 | 2017-11-14 21:00 | 58 | 8.62d | 0d | start no earlier than 2017-11-14 08:00 | 金志超; 韩佳鑫; 林康; 葛鑫志; 胡泽宇 | 10h | 309.7 |
| 60 | 3.1.2.3 | 分析可行性 |  | 2h? | 2017-11-15 19:00 | 2017-11-15 21:00 | 59 | 8.62d | 0d | start no earlier than 2017-11-15 08:00 | 金志超; 韩佳鑫; 林康; 葛鑫志; 胡泽宇 | 10h | 309.7 |
| 61 | 3.1.2.4 | 小组例会7 |  | 0.5h | 2017-11-16 19:00 | 2017-11-16 19:30 |  | 9.31d |  | start no earlier than 2017-11-16 08:00 |  |  |  |
| 62 | 3.1.2.5 | 确定需求优先 |  | 2h? | 2017-11-16 19:00 | 2017-11-16 21:00 | 60 | 8.62d | 0d | start no earlier than 2017-11-16 08:00 | 金志超; 韩佳鑫; 林康; 葛鑫志; 胡泽宇 | 10h | 309.7 |
| 63 | 3.1.2.6 | 为需求建立模型 |  | 2h? | 2017-11-17 19:00 | 2017-11-17 21:00 | 62 | 8.62d | 0d | start no earlier than 2017-11-17 08:00 | 金志超; 韩佳鑫; 林康; 葛鑫志; 胡泽宇 | 10h | 309.7 |
| 64 | 3.1.2.7 | 编写数据字典 |  | 2h? | 2017-11-18 19:00 | 2017-11-18 21:00 | 63 | 8.62d |  | start no earlier than 2017-11-18 08:00 | 金志超; 韩佳鑫; 林康; 葛鑫志; 胡泽宇 | 10h | 309.7 |
| 65 | 3.1.2.8 | 小组例会8 |  | 0.5h | 2017-11-19 19:00 | 2017-11-19 19:30 |  | 8.56d |  | start no earlier than 2017-11-19 08:00 |  |  |  |
| 66 | 3.1.2.9 | 应用质量功能调配 |  | 2h? | 2017-11-19 19:00 | 2017-11-19 21:00 | 56 | 8.38d |  | start no earlier than 2017-11-19 08:00 | 金志超; 韩佳鑫; 林康; 葛鑫志; 胡泽宇 | 10h | 309.7 |
| 67 | 3.1.3 | **需求规格说明** |  | 5.19d? | 2017-11-20 19:00 | 2017-12-10 20:30 | 57 | 8.62d |  |  |  | 190h | 5,884.3 |
| 68 | 3.1.3.1 | 采用软件需求规格说明模板 |  | 2h | 2017-11-20 19:00 | 2017-11-20 21:00 |  | 8.38d | 0d | start no earlier than 2017-11-20 08:00 | 金志超; 韩佳鑫; 林康; 葛鑫志; 胡泽宇 | 10h | 309.7 |
| 69 | 3.1.3.2 | 指明需求来源 |  | 3h? | 2017-11-21 19:00 | 2017-11-22 20:00 | 68 | 8.38d | 0.12d | start no earlier than 2017-11-21 08:00 | 金志超; 韩佳鑫; 林康; 葛鑫志; 胡泽宇 | 15h | 464.55 |
| 70 | 3.1.3.3 | 小组例会9 |  | 0.5h | 2017-11-23 19:00 | 2017-11-23 19:30 |  | 17d |  | start no earlier than 2017-11-23 08:00 |  |  |  |
| 71 | 3.1.3.4 | 为每一项需求注上标号 |  | 8h? | 2017-11-23 19:00 | 2017-11-26 21:00 | 69 | 8.25d | 0d | start no earlier than 2017-11-23 08:00 | 金志超; 韩佳鑫; 林康; 葛鑫志; 胡泽宇 | 40h | 1,238.8 |
| 72 | 3.1.3.5 | 小组例会10 |  | 0.5h | 2017-11-26 19:00 | 2017-11-26 19:30 |  | 16.25d |  | start no earlier than 2017-11-26 08:00 |  |  |  |
| 73 | 3.1.3.6 | 记录业务规范 |  | 8h? | 2017-11-27 19:00 | 2017-11-30 21:00 | 71 | 8.25d | 0d | finish no earlier than 2017-11-30 17:00 | 金志超; 韩佳鑫; 林康; 葛鑫志; 胡泽宇 | 40h | 1,238.8 |
| 74 | 3.1.3.7 | 小组例会11 |  | 0.5h | 2017-11-30 19:00 | 2017-11-30 19:30 |  | 15.25d |  | start no earlier than 2017-11-30 08:00 |  |  |  |
| 75 | 3.1.3.8 | 小组例会12 |  | 0.5h | 2017-12-03 19:00 | 2017-12-03 19:30 |  | 14.5d |  | start no earlier than 2017-12-03 08:00 |  |  |  |
| 76 | 3.1.3.9 | 创建需求跟踪能力矩阵 |  | 8h? | 2017-12-01 19:00 | 2017-12-04 21:00 | 73 | 8.25d | 0.25d | finish no earlier than 2017-12-04 17:00 | 金志超; 韩佳鑫; 林康; 葛鑫志; 胡泽宇 | 40h | 1,238.8 |
| 77 | 3.1.3.10 | 小组例会13 |  | 0.5h | 2017-12-07 19:00 | 2017-12-07 19:30 |  | 13.5d |  | start no earlier than 2017-12-07 08:00 |  |  |  |
| 78 | 3.1.3.11 | 写软件需求规格说明书 | milestone | 9h | 2017-12-06 19:00 | 2017-12-10 20:00 | 76 | 8d | 0d | start no earlier than 2017-12-06 08:00 | 金志超; 韩佳鑫; 林康; 葛鑫志; 胡泽宇 | 45h | 1,393.65 |
| 79 | 3.1.3.12 | 小组例会14 |  | 0.5h | 2017-12-10 19:00 | 2017-12-10 19:30 |  | 12.75d |  | start no earlier than 2017-12-10 08:00 |  |  |  |
| 80 | 3.1.3.13 | 提交软件需求规格说明（草稿） |  | 0.5h | 2017-12-10 20:00 | 2017-12-10 20:30 | 78 | 12.62d |  | start no earlier than 2017-12-10 08:00 |  |  |  |

| ID | WBS | Task | Type | Duration | Start | Finish | Predecessors | Total slack | Free slack | Constraint | Resources | Work | Cost |
| --- | --- | --- | --- | --- | --- | --- | --- | --- | --- | --- | --- | --- | --- |
| 81 | 3.1.4 | **需求规格审核** |  | 1.75d? | 2017-12-11 19:00 | 2017-12-17 21:00 | 57 | 7.88d | 0d |  |  | 60h | 1,858.2 |
| 82 | 3.1.4.1 | 审查需求文档 |  | 3h? | 2017-12-11 19:00 | 2017-12-12 20:00 | 78 | 7.88d | 0.12d | start no earlier than 2017-12-11 08:00 | 金志超; 韩佳鑫; 林康; 葛鑫志; 胡泽宇 | 15h | 464.55 |
| 83 | 3.1.4.2 | 小组例会15 |  | 0.5h | 2017-12-13 19:00 | 2017-12-13 19:30 |  | 8.81d |  | start no earlier than 2017-12-13 08:00 |  |  |  |
| 84 | 3.1.4.3 | 编写测试用例 |  | 3h? | 2017-12-13 19:00 | 2017-12-14 20:00 | 82 | 7.75d | 0.12d | start no earlier than 2017-12-13 08:00 | 金志超; 韩佳鑫; 林康; 葛鑫志; 胡泽宇 | 15h | 464.55 |
| 85 | 3.1.4.4 | 编写用户手册 |  | 2h? | 2017-12-15 19:00 | 2017-12-15 21:00 | 84 | 7.62d | 0d | start no earlier than 2017-12-15 08:00 | 金志超; 韩佳鑫; 林康; 葛鑫志; 胡泽宇 | 10h | 309.7 |
| 86 | 3.1.4.5 | 确定合格的标准 |  | 2h | 2017-12-16 19:00 | 2017-12-16 21:00 | 85 | 7.62d | 0d | start no earlier than 2017-12-16 08:00 | 金志超; 韩佳鑫; 林康; 葛鑫志; 胡泽宇 | 10h | 309.7 |
| 87 | 3.1.4.6 | 小组例会16 |  | 0.5h | 2017-12-17 19:00 | 2017-12-17 19:30 |  | 7.81d |  | start no earlier than 2017-12-17 08:00 |  |  |  |
| 88 | 3.1.4.7 | 模拟需求 |  | 2h | 2017-12-17 19:00 | 2017-12-17 21:00 | 86 | 7.62d |  | start no earlier than 2017-12-17 08:00 | 金志超; 韩佳鑫; 林康; 葛鑫志; 胡泽宇 | 10h | 309.7 |
| 89 | 3.2 | **需求管理过程** |  | 3.5d? | 2017-12-18 19:00 | 2017-12-31 21:00 | 81 | 7.31d |  |  |  | 130h | 4,026.1 |
| 90 | 3.2.1 | 使用需求管理工具 |  | 3h? | 2017-12-18 19:00 | 2017-12-19 20:00 |  | 7.62d | 0d | start no earlier than 2017-12-18 08:00 | 金志超; 韩佳鑫; 林康; 葛鑫志; 胡泽宇 | 15h | 464.55 |
| 91 | 3.2.2 | 小组例会17 |  | 0.5h | 2017-12-21 19:00 | 2017-12-21 19:30 |  | 10d |  | start no earlier than 2017-12-21 08:00 |  |  |  |
| 92 | 3.2.3 | 确定变更控制过程 |  | 3h? | 2017-12-19 20:00 | 2017-12-20 21:00 | 90 | 7.62d | 0d | start no earlier than 2017-12-19 08:00 | 金志超; 韩佳鑫; 林康; 葛鑫志; 胡泽宇 | 15h | 464.55 |
| 93 | 3.2.4 | 建立变更控制委员会 |  | 1h | 2017-12-21 19:00 | 2017-12-21 20:00 | 92 | 7.62d | 0d | start no earlier than 2017-12-20 08:00 | 金志超; 韩佳鑫; 林康; 葛鑫志; 胡泽宇 | 5h | 154.85 |
| 94 | 3.2.5 | 进行变更影响分析 |  | 3h? | 2017-12-21 20:00 | 2017-12-22 21:00 | 93 | 7.62d | 0d | start no earlier than 2017-12-21 08:00 | 金志超; 韩佳鑫; 林康; 葛鑫志; 胡泽宇 | 15h | 464.55 |
| 95 | 3.2.6 | 小组例会18 |  | 0.5h | 2017-12-24 19:00 | 2017-12-24 19:30 |  | 9.25d |  | start no earlier than 2017-12-24 08:00 |  |  |  |
| 96 | 3.2.7 | **编写需求文档的基准版本和控制版本** |  | 0.31d? | 2017-12-23 19:00 | 2017-12-24 19:30 | 94 | 7.88d | 0.19d |  |  | 10h | 309.7 |
| 97 | 3.2.7.1 | 编写需求变更文档 |  | 2h | 2017-12-23 19:00 | 2017-12-23 21:00 |  | 7.62d | 0d | start no earlier than 2017-12-23 08:00 | 金志超; 韩佳鑫; 林康; 葛鑫志; 胡泽宇 | 10h | 309.7 |
| 98 | 3.2.7.2 | 提交需求变更文档 |  | 0.5h? | 2017-12-24 19:00 | 2017-12-24 19:30 | 97 | 7.62d |  | start no earlier than 2017-12-24 08:00 |  |  |  |
| 99 | 3.2.8 | 跟踪每一项变更 |  | 2h | 2017-12-25 19:00 | 2017-12-25 21:00 | 96 | 7.69d | 0d | start no earlier than 2017-12-25 08:00 | 金志超; 韩佳鑫; 林康; 葛鑫志; 胡泽宇 | 10h | 309.7 |
| 100 | 3.2.9 | 维护变更历史记录 |  | 3h | 2017-12-26 19:00 | 2017-12-27 20:00 | 99 | 7.69d | 0d | start no earlier than 2017-12-26 08:00 | 金志超; 韩佳鑫; 林康; 葛鑫志; 胡泽宇 | 15h | 464.55 |
| 101 | 3.2.10 | 跟踪需求状态 |  | 3h | 2017-12-27 20:00 | 2017-12-28 21:00 | 100 | 7.69d | 0d | start no earlier than 2017-12-27 08:00 | 金志超; 韩佳鑫; 林康; 葛鑫志; 胡泽宇 | 15h | 464.55 |
| 102 | 3.2.11 | 小组例会19 |  | 0.5h | 2017-12-28 19:00 | 2017-12-28 19:30 |  | 8.25d |  | start no earlier than 2017-12-28 08:00 |  |  |  |
| 103 | 3.2.12 | 衡量需求稳定性 |  | 2h | 2017-12-29 19:00 | 2017-12-29 21:00 | 101 | 7.81d |  | start no earlier than 2017-12-28 08:00 | 金志超; 林康; 葛鑫志; 韩佳鑫; 胡泽宇 | 10h | 309.7 |
| 104 | 3.2.13 | 软件需求变更文档修改及评审 | milestone | 4h? | 2017-12-30 19:00 | 2017-12-31 21:00 | 96 | 6.44d | 6.25d | start no earlier than 2017-12-30 08:00 | 韩佳鑫; 葛鑫志; 胡泽宇; 金志超; 林康 | 20h | 619.4 |
| 105 | 3.2.14 | 小组例会20 |  | 0.5h | 2017-12-31 19:00 | 2017-12-31 19:30 |  | 7.5d |  | start no earlier than 2017-12-31 08:00 |  |  |  |

| ID | WBS | Task | Type | Duration | Start | Finish | Predecessors | Total slack | Free slack | Constraint | Resources | Work | Cost |
| --- | --- | --- | --- | --- | --- | --- | --- | --- | --- | --- | --- | --- | --- |
| 106 | 4 | **项目总结** |  | 1.06d? | 2018-01-26 19:00 | 2018-01-30 19:30 | 104 | 0d |  |  |  | 30h | 929.1 |
| 107 | 4.1 | 小组例会21 |  | 0.5h | 2018-01-26 19:00 | 2018-01-26 19:30 |  | 0.19d | 0d | start no earlier than 2018-01-26 08:00 |  |  |  |
| 108 | 4.2 | 项目总结报告 | milestone | 6h? | 2018-01-26 19:30 | 2018-01-29 19:30 | 107 | 0.19d |  |  | 韩佳鑫; 林康; 葛鑫志; 胡泽宇; 金志超 | 30h | 929.1 |
| 109 | 4.3 | 小组总结会议 |  | 0.5h | 2018-01-30 19:00 | 2018-01-30 19:30 | 108 | 0d |  | start no earlier than 2018-01-30 08:00 |  |  |  |
