# 需求(再次修改)

Schedule from MS Project, 2017-09-28 to 2018-02-01, costs in ￥, A marks actual dates.

## Calendars

- 标准: Mon-Fri 08:00-12:00, 13:00-17:00; Sat-Sun off. Exceptions (off unless hours are given): 2017-11-01 to 2017-11-04 19:00-21:00, 2017-11-05 19:00-21:30, 2017-11-06 to 2018-01-31 19:00-21:00.

## Resources

| Resource | Rate |
| --- | --- |
| 金志超 | 30.97 |
| 韩佳鑫 | 30.97 |
| 林康 | 30.97 |
| 葛鑫志 | 30.97 |
| 胡泽宇 | 30.97 |

## Schedule

| ID | WBS | Task | Type | Duration | Start | Finish | Predecessors | Complete | Remaining | Total slack | Constraint | Resources | Work | Actual work | Cost | Actual cost |
| --- | --- | --- | --- | --- | --- | --- | --- | --- | --- | --- | --- | --- | --- | --- | --- | --- |
| 1 | 1 | **准备阶段** |  | 2d | 2017-09-28 08:00 A | 2017-09-29 17:00 A |  | 100% |  |  |  |  |  |  |  |  |
| 2 | 1.1 | 组建小组 |  | 1h | 2017-09-28 08:00 A | 2017-09-28 09:00 A |  | 100% |  |  | start no earlier than 2017-09-28 08:00 |  |  |  |  |  |
| 3 | 1.2 | 学习建立配置管理 |  | 4h | 2017-09-29 13:00 A | 2017-09-29 17:00 A |  | 100% |  |  | finish no earlier than 2017-09-29 17:00 |  |  |  |  |  |
| 4 | 2 | **计划阶段** |  | 15.19d | 2017-10-12 08:00 A | 2017-11-05 20:30 A |  | 100% |  |  |  |  | 28h | 28h | 867.16 | 867.16 |
| 5 | 2.1 | 任务下达 | milestone | 2h | 2017-10-12 08:00 A | 2017-10-12 10:00 A | 2 | 100% |  |  | start no earlier than 2017-10-12 08:00 |  |  |  |  |  |
| 6 | 2.2 | 小组例会1 |  | 0.5h | 2017-10-23 08:00 A | 2017-10-23 08:30 A |  | 100% |  |  | start no earlier than 2017-10-23 08:00 |  |  |  |  |  |
| 7 | 2.3 | 小组例会2 |  | 0.5h | 2017-10-26 08:00 A | 2017-10-26 08:30 A |  | 100% |  |  | start no earlier than 2017-10-26 08:00 |  |  |  |  |  |
| 8 | 2.4 | **编写项目需求计划** |  | 1.25d | 2017-10-27 08:00 A | 2017-10-30 10:00 A | 5 | 100% |  |  |  |  | 10h | 10h | 309.7 | 309.7 |
| 9 | 2.4.1 | 编写文档 |  | 2h | 2017-10-27 08:00 A | 2017-10-27 10:00 A |  | 100% |  |  | start no earlier than 2017-10-27 08:00 | 葛鑫志; 韩佳鑫 | 4h | 4h | 123.88 | 123.88 |
| 10 | 2.4.2 | OBS |  | 2h | 2017-10-27 08:00 A | 2017-10-27 10:00 A |  | 100% |  |  | start no earlier than 2017-10-27 08:00 | 金志超; 胡泽宇 | 4h | 4h | 123.88 | 123.88 |
| 11 | 2.4.3 | 甘特图、WBS |  | 2h | 2017-10-30 08:00 A | 2017-10-30 10:00 A |  | 100% |  |  | start no earlier than 2017-10-28 08:00 | 林康 | 2h | 2h | 61.94 | 61.94 |
| 12 | 2.4.4 | 提交需求工程计划 |  | 0.5h | 2017-10-30 08:00 A | 2017-10-30 08:30 A |  | 100% |  |  | start no earlier than 2017-10-29 08:00 |  |  |  |  |  |
| 13 | 2.5 | 小组例会3 |  | 0.5h | 2017-11-02 19:00 A | 2017-11-02 19:30 A |  | 100% |  |  | start no earlier than 2017-11-02 08:00 | 韩佳鑫; 金志超; 胡泽宇; 葛鑫志; 林康 | 2.5h | 2.5h | 77.43 | 77.43 |
| 14 | 2.6 | **项目章程** |  | 1.06d | 2017-10-27 08:00 A | 2017-10-30 08:30 A | 5 | 100% |  |  |  |  | 2h | 2h | 61.94 | 61.94 |
| 15 | 2.6.1 | 编写项目章程 |  | 1h | 2017-10-27 08:00 A | 2017-10-27 09:00 A |  | 100% |  |  | start no earlier than 2017-10-27 08:00 | 金志超; 胡泽宇 | 2h | 2h | 61.94 | 61.94 |
| 16 | 2.6.2 | 项目章程提交 |  | 0.5h | 2017-10-30 08:00 A | 2017-10-30 08:30 A |  | 100% |  |  | start no earlier than 2017-10-29 08:00 |  |  |  |  |  |
| 17 | 2.7 | QA计划 制作 | milestone | 1.5h | 2017-11-05 19:00 A | 2017-11-05 20:30 A | 16 | 100% |  |  | start no earlier than 2017-11-05 08:00 | 金志超 | 1.5h | 1.5h | 46.45 | 46.46 |
| 18 | 2.8 | **修改评审详解项目需求计划** |  | 2.75d | 2017-10-30 09:00 A | 2017-11-04 20:00 A | 8 | 100% |  |  |  |  | 12h | 12h | 371.64 | 371.64 |
| 19 | 2.8.1 | 修改需求工程计划 |  | 2h | 2017-10-30 09:00 A | 2017-10-30 11:00 A | 8 | 100% |  |  | start no earlier than 2017-10-30 08:00 | 韩佳鑫; 胡泽宇; 林康; 葛鑫志 | 8h | 8h | 247.76 | 247.76 |
| 20 | 2.8.2 | 评审需求工程计划 | milestone | 1h | 2017-11-04 19:00 A | 2017-11-04 20:00 A | 19 | 100% |  |  | start no earlier than 2017-11-04 08:00 | 葛鑫志; 韩佳鑫; 胡泽宇; 林康 | 4h | 4h | 123.88 | 123.88 |
| 21 | 3 | **需求阶段** |  | 18.75d? | 2017-11-04 20:00 A | 2018-01-18 19:30 | 20 | 96% | 0.83d? | 3.69d |  |  | 494.1h | 459.1h | 15,302.28 | 14,218.33 |
| 22 | 3.1 | **需求开发过程** |  | 12.94d? | 2017-11-04 20:00 A | 2017-12-25 21:00 A |  | 100% |  |  |  |  | 362.6h | 362.6h | 11,229.72 | 11,229.72 |
| 23 | 3.1.1 | **需求获取** |  | 7.56d | 2017-11-04 20:00 A | 2017-12-04 20:00 A |  | 100% |  |  |  |  | 204.6h | 204.6h | 6,336.46 | 6,336.46 |
| 24 | 3.1.1.1 | **编写项目视图与范围** |  | 0.55d | 2017-11-04 20:00 A | 2017-11-06 19:56 A |  | 100% |  |  |  |  | 5.1h | 5.1h | 157.95 | 157.95 |
| 25 | 3.1.1.1.1 | 确定业务需求 |  | 0.1h | 2017-11-04 20:00 A | 2017-11-04 20:06 A |  | 100% |  |  | start no earlier than 2017-11-04 08:00 | 韩佳鑫 | 0.1h | 0.1h | 3.1 | 3.1 |
| 26 | 3.1.1.1.2 | 确定范围与限制 |  | 0.33h | 2017-11-04 20:06 A | 2017-11-04 20:26 A | 25 | 100% |  |  | start no earlier than 2017-10-30 08:00 | 韩佳鑫; 胡泽宇; 葛鑫志 | 1h | 1h | 30.97 | 30.97 |
| 27 | 3.1.1.1.3 | 确定业务背景 |  | 0.5h | 2017-11-04 20:26 A | 2017-11-04 20:56 A | 26 | 100% |  |  | start no earlier than 2017-10-31 08:00 | 韩佳鑫 | 0.5h | 0.5h | 15.49 | 15.49 |
| 28 | 3.1.1.1.4 | 绘制关联图 |  | 2h | 2017-11-04 20:56 A | 2017-11-05 20:56 A | 27 | 100% |  |  | start no earlier than 2017-10-31 08:00 | 葛鑫志 | 2h | 2h | 61.94 | 61.94 |
| 29 | 3.1.1.1.5 | 使用业务目标来做范围决策 |  | 0.5h | 2017-11-05 20:56 A | 2017-11-05 21:26 A | 28 | 100% |  |  | start no earlier than 2017-11-01 08:00 | 韩佳鑫 | 0.5h | 0.5h | 15.49 | 15.49 |
| 30 | 3.1.1.1.6 | 评估范围变更的影响 |  | 1h | 2017-11-05 21:26 A | 2017-11-06 19:56 A | 29 | 100% |  |  | start no earlier than 2017-11-01 08:00 | 胡泽宇 | 1h | 1h | 30.97 | 30.97 |
| 31 | 3.1.1.1.7 | 与教师客户的第一次访谈 |  | 1h | 2017-11-05 19:00 A | 2017-11-05 20:00 A |  | 100% |  |  | start no earlier than 2017-11-05 08:00 |  |  |  |  |  |
| 32 | 3.1.1.1.8 | 小组例会4 |  | 0.5h | 2017-11-05 08:00 A | 2017-11-05 19:30 A |  | 100% |  |  | start no earlier than 2017-11-05 08:00 |  |  |  |  |  |

| ID | WBS | Task | Duration | Start | Finish | Predecessors | Complete | Constraint | Resources | Work | Actual work | Cost | Actual cost |
| --- | --- | --- | --- | --- | --- | --- | --- | --- | --- | --- | --- | --- | --- |
| 33 | 3.1.1.2 | **确定需求开发过程** | 5.76d | 2017-11-06 19:56 A | 2017-11-29 20:00 A | 24 | 100% |  |  | 181h | 181h | 5,605.57 | 5,605.57 |
| 34 | 3.1.1.2.1 | 用户群分类 | 1h | 2017-11-06 19:56 A | 2017-11-06 20:56 A |  | 100% |  | 韩佳鑫; 葛鑫志; 胡泽宇 | 3h | 3h | 92.91 | 92.91 |
| 35 | 3.1.1.2.2 | 选择产品代表 | 1h | 2017-11-06 19:56 A | 2017-11-06 20:56 A |  | 100% | start no earlier than 2017-11-06 08:00 | 金志超; 韩佳鑫; 林康; 葛鑫志; 胡泽宇 | 5h | 5h | 154.85 | 154.85 |
| 36 | 3.1.1.2.3 | 建立核心队伍 | 0.5h | 2017-11-06 19:56 A | 2017-11-06 20:26 A |  | 100% | start no earlier than 2017-11-04 08:00 | 金志超; 韩佳鑫; 林康; 葛鑫志; 胡泽宇 | 2.5h | 2.5h | 77.43 | 77.43 |
| 37 | 3.1.1.2.4 | 需求获取技巧 | 0.5h | 2017-11-06 19:56 A | 2017-11-06 20:26 A |  | 100% | finish no earlier than 2017-11-05 17:00 | 胡泽宇 | 0.5h | 0.5h | 15.49 | 15.49 |
| 38 | 3.1.1.2.5 | 制定需求获取计划 | 1h | 2017-11-06 20:26 A | 2017-11-07 19:26 A | 37 | 100% | start no earlier than 2017-11-05 08:00 | 韩佳鑫 | 1h | 1h | 30.97 | 30.97 |
| 39 | 3.1.1.2.6 | 界面原型 | 33h | 2017-11-09 20:00 A | 2017-11-26 17:00 A |  | 100% | finish no earlier than 2017-11-12 17:00 | 林康; 金志超; 葛鑫志; 胡泽宇; 韩佳鑫 | 165h | 165h | 5,110.05 | 5,110.05 |
| 40 | 3.1.1.2.7 | 小组例会5 | 0.5h | 2017-11-12 08:00 A | 2017-11-12 19:30 A |  | 100% | start no earlier than 2017-11-11 08:00 |  |  |  |  |  |
| 41 | 3.1.1.2.8 | 小组例会6 | 0.5h | 2017-11-19 08:00 A | 2017-11-19 19:30 A |  | 100% |  |  |  |  |  |  |
| 42 | 3.1.1.2.9 | 与教师客户的第二次访谈 | 1h | 2017-11-21 19:00 A | 2017-11-21 20:00 A |  | 100% | start no earlier than 2017-11-21 08:00 |  |  |  |  |  |
| 43 | 3.1.1.2.10 | 小组例会7 | 0.5h | 2017-11-26 08:00 A | 2017-11-26 19:30 A |  | 100% | start no earlier than 2017-11-09 08:00 |  |  |  |  |  |
| 44 | 3.1.1.2.11 | 执行需求活动 | 1h | 2017-11-27 19:00 A | 2017-11-27 20:00 A |  | 100% | start no earlier than 2017-11-27 08:00 | 韩佳鑫 | 1h | 1h | 30.97 | 30.97 |
| 45 | 3.1.1.2.12 | 需求获取后的跟进 | 0.5h | 2017-11-27 19:00 A | 2017-11-27 19:30 A | 44 | 100% | start no earlier than 2017-11-27 08:00 | 胡泽宇 | 0.5h | 0.5h | 15.49 | 15.49 |
| 46 | 3.1.1.2.13 | 对客户的输入进行分类 | 0.5h | 2017-11-27 19:30 A | 2017-11-27 20:00 A | 45 | 100% | start no earlier than 2017-11-14 08:00 | 林康 | 0.5h | 0.5h | 15.49 | 15.49 |
| 47 | 3.1.1.2.14 | 与教师客户的第三次访谈 | 1h | 2017-11-28 19:00 A | 2017-11-28 20:00 A |  | 100% | start no earlier than 2017-11-28 08:00 |  |  |  |  |  |
| 48 | 3.1.1.2.15 | 假设的需求和隐晦的需求 | 1h | 2017-11-28 20:00 A | 2017-11-28 21:00 A | 47 | 100% | start no earlier than 2017-11-28 08:00 | 金志超 | 1h | 1h | 30.97 | 30.97 |
| 49 | 3.1.1.2.16 | 找出遗漏的需求 | 1h | 2017-11-29 19:00 A | 2017-11-29 20:00 A | 48 | 100% | start no earlier than 2017-11-04 19:00 | 金志超 | 1h | 1h | 30.97 | 30.97 |
| 50 | 3.1.1.3 | 确定使用实例 | 2h | 2017-11-29 19:00 A | 2017-11-29 21:00 A | 36 | 100% | start no earlier than 2017-11-29 08:00 | 葛鑫志 | 2h | 2h | 61.94 | 61.94 |
| 51 | 3.1.1.4 | **确定质量属性** | 0.25d | 2017-11-30 19:00 A | 2017-12-01 17:00 A | 17 | 100% |  |  | 8h | 8h | 247.76 | 247.76 |
| 52 | 3.1.1.4.1 | 以一个广泛的分类为起点 | 2h | 2017-11-30 19:00 A | 2017-11-30 21:00 A |  | 100% | start no earlier than 2017-11-30 08:00 | 金志超 | 2h | 2h | 61.94 | 61.94 |
| 53 | 3.1.1.4.2 | 精简列表 | 1h | 2017-11-30 20:00 A | 2017-12-01 17:00 A |  | 100% | finish no earlier than 2017-12-01 17:00 | 韩佳鑫 | 1h | 1h | 30.97 | 30.97 |
| 54 | 3.1.1.4.3 | 对属性进行排序 | 2h | 2017-11-30 19:00 A | 2017-11-30 21:00 A |  | 100% | start no earlier than 2017-11-30 08:00 | 葛鑫志 | 2h | 2h | 61.94 | 61.94 |
| 55 | 3.1.1.4.4 | 获取对每个属性的具体期望 | 1h | 2017-11-30 20:00 A | 2017-12-01 17:00 A |  | 100% | finish no earlier than 2017-12-01 17:00 | 胡泽宇 | 1h | 1h | 30.97 | 30.97 |
| 56 | 3.1.1.4.5 | 具体指定结构良好的质量需求 | 2h | 2017-11-30 19:00 A | 2017-11-30 21:00 A |  | 100% | start no earlier than 2017-11-30 08:00 | 林康 | 2h | 2h | 61.94 | 61.94 |
| 57 | 3.1.1.5 | 检查问题报告 | 2h | 2017-12-02 19:00 A | 2017-12-03 17:00 A |  | 100% | finish no earlier than 2017-12-03 17:00 | 胡泽宇 | 2h | 2h | 61.94 | 61.94 |
| 58 | 3.1.1.6 | 需求重用 | 1.5h | 2017-12-02 19:00 A | 2017-12-02 20:30 A |  | 100% | start no earlier than 2017-12-02 08:00 | 金志超 | 1.5h | 1.5h | 46.45 | 46.45 |
| 59 | 3.1.1.7 | 召开应用程序开发联系会议（JAD） | 1.5h | 2017-12-03 19:00 A | 2017-12-03 20:30 A |  | 100% | start no earlier than 2017-12-03 08:00 | 金志超; 林康 | 3h | 3h | 92.91 | 92.91 |
| 60 | 3.1.1.8 | 分析用户工作流程 | 1h | 2017-12-03 20:30 A | 2017-12-04 19:30 A | 59 | 100% | finish no earlier than 2017-12-04 17:00 | 韩佳鑫; 胡泽宇 | 2h | 2h | 61.94 | 61.94 |
| 61 | 3.1.1.9 | 小组例会8 | 0.5h | 2017-12-03 08:00 A | 2017-12-03 19:30 A |  | 100% | start no earlier than 2017-11-20 08:00 |  |  |  |  |  |
| 62 | 3.1.1.10 | 与管理员客户的访谈 | 1h | 2017-12-04 19:00 A | 2017-12-04 20:00 A |  | 100% | start no earlier than 2017-12-04 08:00 |  |  |  |  |  |

| ID | WBS | Task | Type | Duration | Start | Finish | Predecessors | Complete | Constraint | Resources | Work | Actual work | Cost | Actual cost |
| --- | --- | --- | --- | --- | --- | --- | --- | --- | --- | --- | --- | --- | --- | --- |
| 63 | 3.1.2 | **需求分析** |  | 1.38d? | 2017-12-01 08:00 A | 2017-12-06 20:00 A | 23 | 100% |  |  | 12h | 12h | 371.64 | 371.64 |
| 64 | 3.1.2.1 | 绘制关联图 |  | 1h | 2017-12-01 08:00 A | 2017-12-01 20:00 A |  | 100% | start no earlier than 2017-11-13 08:00 | 葛鑫志; 胡泽宇 | 2h | 2h | 61.94 | 61.94 |
| 65 | 3.1.2.2 | 创建开发原型 |  | 2h? | 2017-12-01 08:00 A | 2017-12-04 21:00 A | 64 | 100% | start no earlier than 2017-11-14 08:00 | 林康 | 2h | 2h | 61.94 | 61.94 |
| 66 | 3.1.2.3 | 分析可行性 |  | 1h? | 2017-12-01 08:00 A | 2017-12-01 20:00 A | 65 | 100% | start no earlier than 2017-11-15 08:00 | 韩佳鑫 | 1h | 1h | 30.97 | 30.97 |
| 67 | 3.1.2.4 | 小组例会9 |  | 0.5h | 2017-12-02 08:00 A | 2017-12-02 19:30 A |  | 100% | start no earlier than 2017-11-23 08:00 |  |  |  |  |  |
| 68 | 3.1.2.5 | 确定需求优先 |  | 1h? | 2017-12-04 20:00 A | 2017-12-04 21:00 A | 66 | 100% | start no earlier than 2017-12-02 08:00 | 葛鑫志 | 1h | 1h | 30.97 | 30.97 |
| 69 | 3.1.2.6 | 为需求建立模型 |  | 2h? | 2017-12-05 19:00 A | 2017-12-05 21:00 A | 68 | 100% | start no earlier than 2017-11-17 08:00 | 林康 | 2h | 2h | 61.94 | 61.94 |
| 70 | 3.1.2.7 | 编写数据字典 |  | 1h? | 2017-12-06 19:00 A | 2017-12-06 20:00 A | 69 | 100% | start no earlier than 2017-11-18 08:00 | 金志超; 韩佳鑫 | 2h | 2h | 61.94 | 61.94 |
| 71 | 3.1.2.8 | 小组例会10 | milestone | 0h | 2017-12-03 08:00 A | 2017-12-03 08:00 A |  | 100% | start no earlier than 2017-11-26 08:00 |  |  |  |  |  |
| 72 | 3.1.2.9 | 应用质量功能调配 |  | 2h? | 2017-12-04 20:00 A | 2017-12-05 20:00 A |  | 100% | start no earlier than 2017-11-26 08:00 | 胡泽宇 | 2h | 2h | 61.94 | 61.94 |
| 73 | 3.1.2.10 | 与教师客户的第四次访谈 |  | 1h | 2017-12-06 19:00 A | 2017-12-06 20:00 A |  | 100% | start no earlier than 2017-12-06 08:00 |  |  |  |  |  |
| 74 | 3.1.3 | **需求规格说明** |  | 1.06d? | 2017-12-06 20:00 A | 2017-12-10 20:30 A | 63 | 100% |  |  | 36h | 36h | 1,114.92 | 1,114.92 |
| 75 | 3.1.3.1 | 采用软件需求规格说明模板 |  | 2h | 2017-12-06 20:00 A | 2017-12-07 20:00 A |  | 100% | start no earlier than 2017-11-20 08:00 | 葛鑫志; 胡泽宇 | 4h | 4h | 123.88 | 123.88 |
| 76 | 3.1.3.2 | 指明需求来源 |  | 2h? | 2017-12-07 20:00 A | 2017-12-08 20:00 A | 75 | 100% | start no earlier than 2017-11-21 08:00 | 金志超; 韩佳鑫 | 4h | 4h | 123.88 | 123.88 |
| 77 | 3.1.3.3 | 小组例会11 |  | 0.5h | 2017-12-06 20:00 A | 2017-12-06 20:30 A |  | 100% | start no earlier than 2017-11-29 08:00 |  |  |  |  |  |
| 78 | 3.1.3.4 | 为每一项需求注上标号 |  | 2h | 2017-12-08 20:00 A | 2017-12-09 20:00 A | 76 | 100% | start no earlier than 2017-11-23 08:00 | 胡泽宇 | 2h | 2h | 61.94 | 61.94 |
| 79 | 3.1.3.5 | 小组例会12 |  | 0.5h | 2017-12-06 20:00 A | 2017-12-06 20:30 A |  | 100% | start no earlier than 2017-12-01 08:00 |  |  |  |  |  |
| 80 | 3.1.3.6 | 记录业务规范 |  | 2h? | 2017-12-06 20:00 A | 2017-12-07 20:00 A |  | 100% | finish no earlier than 2017-12-06 17:00 | 金志超; 韩佳鑫 | 4h | 4h | 123.88 | 123.88 |
| 81 | 3.1.3.7 | 小组例会13 |  | 0.5h | 2017-12-06 20:00 A | 2017-12-06 20:30 A |  | 100% | start no earlier than 2017-12-05 08:00 |  |  |  |  |  |
| 82 | 3.1.3.8 | 小组例会14 |  | 0.5h | 2017-12-06 20:00 A | 2017-12-06 20:30 A |  | 100% | start no earlier than 2017-12-06 08:00 |  |  |  |  |  |
| 83 | 3.1.3.9 | 创建需求跟踪能力矩阵 |  | 2h? | 2017-12-07 20:00 A | 2017-12-08 20:00 A | 80 | 100% | finish no earlier than 2017-12-04 17:00 | 林康; 葛鑫志; 胡泽宇 | 6h | 6h | 185.82 | 185.82 |
| 84 | 3.1.3.10 | 小组例会15 |  | 0.5h | 2017-12-07 19:00 A | 2017-12-07 19:30 A |  | 100% | start no earlier than 2017-12-07 08:00 |  |  |  |  |  |
| 85 | 3.1.3.11 | 写软件需求规格说明书 | milestone | 4h | 2017-12-08 20:00 A | 2017-12-10 20:00 A | 83 | 100% | start no earlier than 2017-12-07 08:00 | 金志超; 韩佳鑫; 林康; 葛鑫志 | 16h | 16h | 495.52 | 495.52 |
| 86 | 3.1.3.12 | 小组例会16 |  | 0.5h | 2017-12-10 19:00 A | 2017-12-10 19:30 A |  | 100% | start no earlier than 2017-12-10 08:00 |  |  |  |  |  |
| 87 | 3.1.3.13 | 提交软件需求规格说明（草稿） |  | 0.5h | 2017-12-10 20:00 A | 2017-12-10 20:30 A | 85 | 100% | start no earlier than 2017-12-10 08:00 |  |  |  |  |  |

| ID | WBS | Task | Type | Duration | Start | Finish | Predecessors | Complete | Remaining | Total slack | Constraint | Resources | Work | Actual work | Cost | Actual cost |
| --- | --- | --- | --- | --- | --- | --- | --- | --- | --- | --- | --- | --- | --- | --- | --- | --- |
| 88 | 3.1.4 | **需求规格审核** |  | 3.75d? | 2017-12-11 19:00 A | 2017-12-25 21:00 A | 63 | 100% |  |  |  |  | 110h | 110h | 3,406.7 | 3,406.7 |
| 89 | 3.1.4.1 | 小组例会17 |  | 2h | 2017-12-11 19:00 A | 2017-12-12 17:00 A |  | 100% |  |  | finish no earlier than 2017-12-12 17:00 |  |  |  |  |  |
| 90 | 3.1.4.2 | 审查需求文档 | milestone | 0h? | 2017-12-13 08:00 A | 2017-12-13 08:00 A | 85 | 100% |  |  | start no earlier than 2017-12-13 08:00 | 金志超; 韩佳鑫; 林康; 葛鑫志; 胡泽宇 |  |  |  |  |
| 91 | 3.1.4.3 | 编写测试用例 |  | 10h? | 2017-12-13 19:00 A | 2017-12-18 17:00 A | 90 | 100% |  |  | finish no earlier than 2017-12-18 17:00 | 金志超; 韩佳鑫; 林康; 葛鑫志; 胡泽宇 | 50h | 50h | 1,548.5 | 1,548.5 |
| 92 | 3.1.4.4 | 编写用户手册 |  | 8h? | 2017-12-19 19:00 A | 2017-12-23 17:00 A | 91 | 100% |  |  | finish no earlier than 2017-12-23 17:00 | 金志超; 韩佳鑫; 林康; 葛鑫志; 胡泽宇 | 40h | 40h | 1,238.8 | 1,238.8 |
| 93 | 3.1.4.5 | 小组例会18 |  | 0.5h | 2017-12-24 08:00 A | 2017-12-24 19:30 A |  | 100% |  |  | start no earlier than 2017-12-15 08:00 |  |  |  |  |  |
| 94 | 3.1.4.6 | 确定合格的标准 |  | 2h | 2017-12-24 08:00 A | 2017-12-24 21:00 A | 93 | 100% |  |  | start no earlier than 2017-12-16 08:00 | 金志超; 韩佳鑫; 林康; 葛鑫志; 胡泽宇 | 10h | 10h | 309.7 | 309.7 |
| 95 | 3.1.4.7 | 内部评审 | milestone | 0d? | 2017-12-24 08:00 A | 2017-12-24 17:00 A | 94 | 100% |  |  | finish no earlier than 2017-12-24 17:00 |  |  |  |  |  |
| 96 | 3.1.4.8 | 软件需求规格说明评审 | milestone | 2h | 2017-12-25 08:00 A | 2017-12-25 21:00 A | 95 | 100% |  |  | start no earlier than 2017-12-17 08:00 | 金志超; 韩佳鑫; 林康; 葛鑫志; 胡泽宇 | 10h | 10h | 309.7 | 309.7 |
| 97 | 3.2 | **需求管理过程** |  | 5.81d? | 2017-12-26 19:00 A | 2018-01-18 19:30 | 88 | 81% | 1.13d? | 3.69d |  |  | 131.5h | 96.5h | 4,072.55 | 2,988.61 |
| 98 | 3.2.1 | 使用需求管理工具 |  | 3h? | 2017-12-26 19:00 A | 2017-12-27 20:00 A |  | 100% |  |  | start no earlier than 2017-12-26 08:00 | 金志超; 韩佳鑫; 林康; 葛鑫志; 胡泽宇 | 15h | 15h | 464.55 | 464.55 |
| 99 | 3.2.2 | 小组例会19 |  | 0.5h | 2017-12-26 19:00 A | 2017-12-26 19:30 A |  | 100% |  |  | start no earlier than 2017-12-26 08:00 |  |  |  |  |  |
| 100 | 3.2.3 | 确定变更控制过程 |  | 3h? | 2017-12-27 20:00 A | 2017-12-28 21:00 A | 98 | 100% |  |  | finish no earlier than 2017-12-24 17:00 | 金志超; 韩佳鑫; 林康; 葛鑫志; 胡泽宇 | 15h | 15h | 464.55 | 464.55 |
| 101 | 3.2.4 | 建立变更控制委员会 |  | 1h | 2017-12-29 19:00 A | 2017-12-29 20:00 A | 100 | 100% |  |  | start no earlier than 2017-12-20 08:00 | 金志超; 韩佳鑫; 林康; 葛鑫志; 胡泽宇 | 5h | 5h | 154.85 | 154.85 |
| 102 | 3.2.5 | 进行变更影响分析 |  | 3h? | 2017-12-29 20:00 A | 2017-12-30 21:00 A | 101 | 100% |  |  | start no earlier than 2017-12-21 08:00 | 金志超; 韩佳鑫; 林康; 葛鑫志; 胡泽宇 | 15h | 15h | 464.55 | 464.55 |
| 103 | 3.2.6 | 小组例会20 |  | 0.5h | 2017-12-29 19:00 A | 2017-12-29 19:30 A |  | 100% |  |  | start no earlier than 2017-12-29 08:00 |  |  |  |  |  |
| 104 | 3.2.7 | **编写需求文档的基准版本和控制版本** |  | 0.5d | 2017-12-31 19:00 A | 2018-01-02 08:00 A | 102 | 100% |  |  |  |  | 10h | 10h | 309.7 | 309.7 |
| 105 | 3.2.7.1 | 编写需求变更文档 |  | 2h | 2017-12-31 19:00 A | 2018-01-01 17:00 A |  | 100% |  |  | finish no earlier than 2018-01-01 17:00 | 金志超; 韩佳鑫; 林康; 葛鑫志; 胡泽宇 | 10h | 10h | 309.7 | 309.7 |
| 106 | 3.2.7.2 | 提交需求变更文档 | milestone | 0h | 2018-01-02 08:00 A | 2018-01-02 08:00 A | 105 | 100% |  |  | start no earlier than 2018-01-02 08:00 |  |  |  |  |  |
| 107 | 3.2.8 | **跟踪每一项变更** |  | 0.5d | 2018-01-02 19:00 A | 2018-01-04 17:00 | 104 | 99% | 0d | 0d |  | 林康; 葛鑫志; 胡泽宇 | 10.5h | 5.5h | 325.19 | 170.34 |
| 108 | 3.2.8.1 | 用户手册变更 |  | 0.5h | 2018-01-02 20:30 A | 2018-01-03 17:00 A | 104 | 100% |  |  | finish no earlier than 2018-01-03 17:00 | 金志超 | 0.5h | 0.5h | 15.49 | 15.49 |
| 109 | 3.2.8.2 | 需求规格说明变更 |  | 2h | 2018-01-02 19:00 A | 2018-01-03 17:00 A | 104 | 100% |  |  | finish no earlier than 2018-01-03 17:00 | 韩佳鑫 | 2h | 2h | 61.94 | 61.94 |
| 110 | 3.2.8.3 | 测试用例变更 |  | 0.5h | 2018-01-03 20:30 A | 2018-01-04 17:00 A | 104 | 100% |  |  | finish no earlier than 2018-01-04 17:00 | 韩佳鑫 | 0.5h | 0.5h | 15.49 | 15.49 |
| 111 | 3.2.9 | 维护变更历史记录 |  | 3h | 2018-01-04 19:00 A | 2018-01-05 20:00 A | 108 | 100% |  |  | start no earlier than 2017-12-26 08:00 | 金志超; 韩佳鑫 | 6h | 6h | 185.82 | 185.82 |
| 112 | 3.2.10 | 跟踪需求状态 |  | 3h | 2018-01-05 20:00 A | 2018-01-07 17:00 A | 111 | 100% |  |  | finish no earlier than 2018-01-07 17:00 | 金志超; 韩佳鑫; 林康; 葛鑫志; 胡泽宇 | 15h | 15h | 464.55 | 464.55 |
| 113 | 3.2.11 | 小组例会21 |  | 0.5h | 2018-01-07 19:00 A | 2018-01-07 19:30 A |  | 100% |  |  | start no earlier than 2018-01-07 08:00 |  |  |  |  |  |
| 114 | 3.2.12 | 衡量需求稳定性 |  | 2h | 2018-01-08 19:00 A | 2018-01-08 21:00 A | 112 | 100% |  |  | start no earlier than 2018-01-08 08:00 | 葛鑫志; 韩佳鑫; 胡泽宇 | 6h | 6h | 185.82 | 185.82 |
| 115 | 3.2.13 | 内部评审 |  | 2h | 2018-01-09 19:00 A | 2018-01-10 17:00 A | 114 | 100% |  |  | finish no earlier than 2018-01-10 17:00 |  |  |  |  |  |
| 116 | 3.2.14 | 软件需求变更文档修改及评审 | milestone | 2h | 2018-01-11 19:00 A | 2018-01-12 17:00 A | 104 | 100% |  |  | finish no earlier than 2018-01-12 17:00 | 金志超; 林康 | 4h | 4h | 123.88 | 123.88 |
| 117 | 3.2.15 | 小组例会22 |  | 0.5h | 2018-01-13 19:00 A | 2018-01-13 19:30 A |  | 100% |  |  | start no earlier than 2018-01-13 08:00 |  |  |  |  |  |

| ID | WBS | Task | Type | Duration | Start | Finish | Predecessors | Total slack | Free slack | Constraint | Resources | Work | Cost |
| --- | --- | --- | --- | --- | --- | --- | --- | --- | --- | --- | --- | --- | --- |
| 118 | 3.2.16 | **项目总结** |  | 1.31d? | 2018-01-13 19:00 | 2018-01-18 19:30 |  | 3.69d |  |  |  | 30h | 929.1 |
| 119 | 3.2.16.1 | 小组例会23 |  | 0.5h | 2018-01-13 19:00 | 2018-01-13 19:30 |  | 4.19d | 0d | start no earlier than 2018-01-13 08:00 |  |  |  |
| 120 | 3.2.16.2 | 项目总结报告 |  | 6h? | 2018-01-13 19:30 | 2018-01-16 19:30 | 119 | 4.19d |  |  | 韩佳鑫; 林康; 葛鑫志; 胡泽宇; 金志超 | 30h | 929.1 |
| 121 | 3.2.16.3 | 项目总结评审 | milestone | 0h | 2018-01-17 08:00 | 2018-01-17 08:00 |  | 3.94d | 0.25d | start no earlier than 2018-01-17 08:00 |  |  |  |
| 122 | 3.2.16.4 | 小组总结会议 |  | 0.5h | 2018-01-18 19:00 | 2018-01-18 19:30 | 121 | 3.69d |  | start no earlier than 2018-01-18 08:00 |  |  |  |
| 123 | 4 | **设计阶段** |  | 1.12d? | 2018-01-19 19:00 | 2018-01-23 20:00 |  | 1.25d | 0d |  |  | 42h | 1,300.74 |
| 124 | 4.1 | 概要设计 |  | 6h? | 2018-01-19 19:00 | 2018-01-21 21:00 |  | 1.25d | 0d | start no earlier than 2018-01-19 08:00 | 金志超; 韩佳鑫; 林康; 葛鑫志; 胡泽宇 | 30h | 929.1 |
| 125 | 4.2 | 接口设计 |  | 1h? | 2018-01-22 19:00 | 2018-01-22 20:00 | 124 | 1.25d | 0d | start no earlier than 2018-01-02 08:00 | 金志超; 韩佳鑫; 林康; 葛鑫志; 胡泽宇 | 5h | 154.85 |
| 126 | 4.3 | 软件结构 |  | 1h? | 2018-01-22 20:00 | 2018-01-22 21:00 | 125 | 1.25d | 0d | start no earlier than 2018-01-02 08:00 | 金志超; 韩佳鑫; 林康; 葛鑫志; 胡泽宇 | 5h | 154.85 |
| 127 | 4.4 | 数据库设计 |  | 1h? | 2018-01-23 19:00 | 2018-01-23 20:00 | 126 | 1.25d | 0d | start no earlier than 2018-01-02 08:00 | 金志超; 林康 | 2h | 61.94 |
| 128 | 5 | **实现阶段** |  | 0.5d? | 2018-01-23 20:00 | 2018-01-25 20:00 | 123 | 1.12d | 0d |  |  | 13h | 402.61 |
| 129 | 5.1 | 终端控制模块 |  | 1h? | 2018-01-23 20:00 | 2018-01-23 21:00 |  | 1.5d |  | start no earlier than 2018-01-03 08:00 | 韩佳鑫; 葛鑫志 | 2h | 61.94 |
| 130 | 5.2 | 小组例会23 |  | 0.5h | 2018-01-23 20:00 | 2018-01-23 20:30 |  | 1.56d |  | start no earlier than 2018-01-04 08:00 |  |  |  |
| 131 | 5.3 | 数据同步模块 |  | 1h? | 2018-01-23 20:00 | 2018-01-23 21:00 | 127 | 1.25d | 0d | start no earlier than 2018-01-04 08:00 | 胡泽宇 | 1h | 30.97 |
| 132 | 5.4 | 数据库实现模块 |  | 1h? | 2018-01-24 19:00 | 2018-01-24 20:00 | 131 | 1.25d | 0.12d | start no earlier than 2018-01-05 08:00 | 金志超; 韩佳鑫; 林康; 葛鑫志; 胡泽宇 | 5h | 154.85 |
| 133 | 5.5 | 后天管理中心控制模块 |  | 1h? | 2018-01-25 19:00 | 2018-01-25 20:00 | 132 | 1.12d |  | start no earlier than 2018-01-25 08:00 | 金志超; 韩佳鑫; 林康; 葛鑫志; 胡泽宇 | 5h | 154.85 |
| 134 | 5.6 | 小组例会24 |  | 0.5h | 2018-01-25 19:00 | 2018-01-25 19:30 |  | 1.19d |  | start no earlier than 2018-01-25 08:00 |  |  |  |
| 135 | 6 | **测试与维护** |  | 1.25d? | 2018-01-25 20:00 | 2018-01-30 20:00 | 128 | 0.62d |  |  |  | 45h | 1,393.65 |
| 136 | 6.1 | 测试计划 |  | 1h? | 2018-01-25 20:00 | 2018-01-26 17:00 | 123 | 1.12d | 0d | finish no earlier than 2018-01-26 17:00 | 金志超; 韩佳鑫; 林康; 葛鑫志; 胡泽宇 | 5h | 154.85 |
| 137 | 6.2 | 小组例会25 |  | 0.5h | 2018-01-26 19:00 | 2018-01-26 19:30 |  | 1.69d |  | start no earlier than 2018-01-26 08:00 |  |  |  |
| 138 | 6.3 | 界面测试与数据确认测试 |  | 2h | 2018-01-26 19:00 | 2018-01-27 17:00 | 136 | 1.12d | 0.5d | finish no earlier than 2018-01-27 17:00 | 金志超; 韩佳鑫; 林康; 葛鑫志; 胡泽宇 | 10h | 309.7 |
| 139 | 6.4 | 小组例会26 |  | 0.5h | 2018-01-27 19:00 | 2018-01-27 19:30 |  | 1.44d |  | start no earlier than 2018-01-27 08:00 |  |  |  |
| 140 | 6.5 | 接口测试与代码走读 |  | 1h | 2018-01-27 19:00 | 2018-01-27 20:00 | 136 | 1d | 0.38d | start no earlier than 2018-01-27 08:00 | 金志超; 韩佳鑫; 林康; 葛鑫志; 胡泽宇 | 5h | 154.85 |
| 141 | 6.6 | 集成测试 |  | 2h? | 2018-01-28 19:00 | 2018-01-28 21:00 | 136 | 0.62d | 0d | start no earlier than 2018-01-28 08:00 | 金志超; 韩佳鑫; 林康; 葛鑫志; 胡泽宇 | 10h | 309.7 |
| 142 | 6.7 | 测试报告书 |  | 2h? | 2018-01-29 19:00 | 2018-01-29 21:00 | 138, 140, 141 | 0.62d | 0d | start no earlier than 2018-01-29 08:00 | 金志超; 韩佳鑫; 林康; 葛鑫志; 胡泽宇 | 10h | 309.7 |
| 143 | 6.8 | 小组例会27 |  | 0.5h | 2018-01-30 19:00 | 2018-01-30 19:30 |  | 0.69d |  | start no earlier than 2018-01-30 08:00 |  |  |  |
| 144 | 6.9 | 系统维护计划 |  | 1h? | 2018-01-30 19:00 | 2018-01-30 20:00 | 142 | 0.62d |  | start no earlier than 2018-01-30 08:00 | 金志超; 韩佳鑫; 林康; 葛鑫志; 胡泽宇 | 5h | 154.85 |
| 145 | 6.10 | 小组例会28 |  | 0.5h | 2018-01-30 19:00 | 2018-01-30 19:30 |  | 0.69d |  | start no earlier than 2018-01-30 08:00 |  |  |  |

| ID | WBS | Task | Duration | Start | Finish | Predecessors | Total slack | Constraint | Resources | Work | Cost |
| --- | --- | --- | --- | --- | --- | --- | --- | --- | --- | --- | --- |
| 146 | 7 | **项目交付与技术支持** | 0.5d? | 2018-01-31 19:00 | 2018-02-01 10:00 |  | 0d |  |  | 17.5h | 541.98 |
| 147 | 7.1 | 安装部署计划 | 1h? | 2018-01-31 19:00 | 2018-01-31 20:00 |  | 0d | start no earlier than 2018-01-31 08:00 | 金志超; 韩佳鑫; 林康; 葛鑫志; 胡泽宇 | 5h | 154.85 |
| 148 | 7.2 | 小组例会29 | 0.5h | 2018-01-31 20:00 | 2018-01-31 20:30 | 147 | 0d | start no earlier than 2018-01-25 08:00 |  |  |  |
| 149 | 7.3 | 项目总结报告 | 2h? | 2018-01-31 20:30 | 2018-02-01 09:30 | 148 | 0d |  | 韩佳鑫; 林康; 葛鑫志; 胡泽宇; 金志超 | 10h | 309.7 |
| 150 | 7.4 | 小组总结会议 | 0.5h | 2018-02-01 09:30 | 2018-02-01 10:00 | 149 | 0d | start no earlier than 2018-01-30 08:00 | 金志超; 韩佳鑫; 林康; 葛鑫志; 胡泽宇 | 2.5h | 77.43 |
