# 甘特图（11.3）总体计划(1)

Schedule from MS Project, 2017-09-28 to 2018-01-30, costs in ￥, A marks actual dates.

## Calendars

- 标准: Mon-Fri 08:00-12:00, 13:00-17:00; Sat-Sun off. Exceptions (off unless hours are given): 2017-10-01 to 2018-01-31 19:00-21:00.

## Resources

| Resource | Rate |
| --- | --- |
| 金志超 | 30.97 |
| 韩佳鑫 | 30.97 |
| 林康 | 30.97 |
| 葛鑫志 | 30.97 |
| 胡泽宇 | 30.97 |

## Schedule

| ID | WBS | Task | Type | Duration | Start | Finish | Predecessors | Complete | Remaining | Total slack | Constraint | Resources | Work | Actual work | Cost | Actual cost |
| --- | --- | --- | --- | --- | --- | --- | --- | --- | --- | --- | --- | --- | --- | --- | --- | --- |
| 1 | 1 | **准备阶段** |  | 2d | 2017-09-28 08:00 A | 2017-09-29 17:00 A |  | 100% |  |  |  |  |  |  |  |  |
| 2 | 1.1 | 组建小组 |  | 1h | 2017-09-28 08:00 A | 2017-09-28 09:00 A |  | 100% |  |  | start no earlier than 2017-09-28 08:00 |  |  |  |  |  |
| 3 | 1.2 | 学习建立配置管理 |  | 4h | 2017-09-29 13:00 A | 2017-09-29 17:00 A |  | 100% |  |  | finish no earlier than 2017-09-29 17:00 |  |  |  |  |  |
| 4 | 2 | **计划阶段** |  | 9d? | 2017-10-12 19:00 A | 2017-11-16 21:00 |  | 95% | 0.41d? | 18.56d |  |  | 73.5h | 73.5h | 2,276.3 | 2,276.3 |
| 5 | 2.1 | 任务下达 | milestone | 2h | 2017-10-12 19:00 A | 2017-10-12 21:00 A | 2 | 100% |  |  | start no earlier than 2017-10-12 08:00 |  |  |  |  |  |
| 6 | 2.2 | 小组例会1 |  | 0.5h | 2017-10-22 19:00 A | 2017-10-22 19:30 A |  | 100% |  |  |  |  |  |  |  |  |
| 7 | 2.3 | **项目可行性报告** |  | 4.12d? | 2017-10-13 19:00 A | 2017-10-29 20:00 A | 5 | 100% |  |  |  |  | 22h | 22h | 681.34 | 681.34 |
| 8 | 2.3.1 | 可行性分析草稿 |  | 5h | 2017-10-13 19:00 A | 2017-10-15 20:00 A |  | 100% |  |  | start no earlier than 2017-10-13 08:00 | 韩佳鑫; 葛鑫志 | 10h | 10h | 309.7 | 309.7 |
| 9 | 2.3.2 | 初次修改审核可行性分析 |  | 4h | 2017-10-21 19:00 A | 2017-10-22 21:00 A | 8 | 100% |  |  | start no earlier than 2017-10-21 08:00 | 韩佳鑫; 葛鑫志 | 8h | 8h | 247.76 | 247.76 |
| 10 | 2.3.3 | 再次修改可行性报告 |  | 2h | 2017-10-28 19:00 A | 2017-10-28 21:00 A | 9 | 100% |  |  | start no earlier than 2017-10-28 08:00 | 韩佳鑫; 葛鑫志 | 4h | 4h | 123.88 | 123.88 |
| 11 | 2.3.4 | 可行性报告提交 |  | 1h? | 2017-10-29 19:00 A | 2017-10-29 20:00 A | 10 | 100% |  |  | start no earlier than 2017-10-29 08:00 |  |  |  |  |  |
| 12 | 2.4 | 小组例会2 |  | 0.5h | 2017-10-26 19:00 A | 2017-10-26 19:30 A |  | 100% |  |  | start no earlier than 2017-10-26 08:00 |  |  |  |  |  |
| 13 | 2.5 | **项目总体计划** |  | 3.88d | 2017-10-14 19:00 A | 2017-10-29 20:00 A | 5 | 100% |  |  |  |  | 27.5h | 27.5h | 851.67 | 851.67 |
| 14 | 2.5.1 | 写项目总体计划草稿 |  | 5h | 2017-10-14 19:00 A | 2017-10-16 20:00 A |  | 100% |  |  | start no earlier than 2017-10-14 08:00 | 金志超 | 5h | 5h | 154.85 | 154.85 |
| 15 | 2.5.2 | 任务分解 |  | 3h | 2017-10-17 19:00 A | 2017-10-18 20:00 A |  | 100% |  |  | start no earlier than 2017-10-17 08:00 | 金志超; 胡泽宇 | 6h | 6h | 185.82 | 185.82 |
| 16 | 2.5.3 | **WBS** |  | 2d | 2017-10-18 20:00 A | 2017-10-26 20:00 A | 15 | 100% |  |  |  |  | 3h | 3h | 92.91 | 92.91 |
| 17 | 2.5.3.1 | 制作WBS |  | 2h | 2017-10-18 20:00 A | 2017-10-19 20:00 A |  | 100% |  |  | start no earlier than 2017-10-18 08:00 | 胡泽宇 | 2h | 2h | 61.94 | 61.94 |
| 18 | 2.5.3.2 | 修改WBS |  | 1h | 2017-10-26 19:00 A | 2017-10-26 20:00 A | 17 | 100% |  |  | start no earlier than 2017-10-26 08:00 | 韩佳鑫 | 1h | 1h | 30.97 | 30.97 |
| 19 | 2.5.4 | **OBS** |  | 2d | 2017-10-19 19:00 A | 2017-10-26 21:00 A | 15 | 100% |  |  |  |  | 5h | 5h | 154.85 | 154.85 |
| 20 | 2.5.4.1 | 制作OBS |  | 1h | 2017-10-19 19:00 A | 2017-10-19 20:00 A |  | 100% |  |  | start no earlier than 2017-10-19 08:00 | 金志超 | 1h | 1h | 30.97 | 30.97 |
| 21 | 2.5.4.2 | 修改OBS |  | 2h | 2017-10-26 19:00 A | 2017-10-26 21:00 A | 20 | 100% |  |  | start no earlier than 2017-10-26 08:00 | 胡泽宇; 金志超 | 4h | 4h | 123.88 | 123.88 |
| 22 | 2.5.5 | **甘特图** |  | 2.12d | 2017-10-18 20:00 A | 2017-10-27 17:00 A | 15 | 100% |  |  |  |  | 8h | 8h | 247.76 | 247.76 |
| 23 | 2.5.5.1 | 制作甘特图 |  | 4h | 2017-10-18 20:00 A | 2017-10-20 20:00 A |  | 100% |  |  | start no earlier than 2017-10-18 08:00 | 林康 | 4h | 4h | 123.88 | 123.88 |
| 24 | 2.5.5.2 | 修改甘特图 |  | 4h | 2017-10-25 19:00 A | 2017-10-27 17:00 A | 23 | 100% |  |  | finish no earlier than 2017-10-27 17:00 | 林康 | 4h | 4h | 123.88 | 123.88 |
| 25 | 2.5.6 | 修改项目总体计划 |  | 0.5h | 2017-10-28 19:00 A | 2017-10-28 19:30 A | 14 | 100% |  |  | start no earlier than 2017-10-28 08:00 | 金志超 | 0.5h | 0.5h | 15.49 | 15.49 |
| 26 | 2.5.7 | 小组例会3 |  | 0.5h | 2017-10-29 19:00 A | 2017-10-29 19:30 A |  | 100% |  |  | start no earlier than 2017-10-29 08:00 |  |  |  |  |  |
| 27 | 2.5.8 | 提交项目总体计划 |  | 1h | 2017-10-29 19:00 A | 2017-10-29 20:00 A | 25 | 100% |  |  | start no earlier than 2017-10-29 08:00 |  |  |  |  |  |
| 28 | 2.6 | 评审项目总体计划 |  | 0.5h | 2017-11-02 19:00 A | 2017-11-02 19:30 A | 27 | 100% |  |  | start no earlier than 2017-11-02 19:00 | 韩佳鑫; 林康; 葛鑫志; 胡泽宇 | 2h | 2h | 61.94 | 61.94 |

| ID | WBS | Task | Type | Duration | Start | Finish | Predecessors | Complete | Remaining | Total slack | Free slack | Constraint | Resources | Work | Actual work | Cost | Actual cost |
| --- | --- | --- | --- | --- | --- | --- | --- | --- | --- | --- | --- | --- | --- | --- | --- | --- | --- |
| 29 | 2.7 | **编写项目需求计划** |  | 0.62d | 2017-10-27 19:00 A | 2017-10-29 20:00 A | 15 | 100% |  |  |  |  |  | 11h | 11h | 340.67 | 340.67 |
| 30 | 2.7.1 | 编写文档 |  | 2h | 2017-10-27 19:00 A | 2017-10-27 21:00 A |  | 100% |  |  |  | start no earlier than 2017-10-27 08:00 | 葛鑫志; 韩佳鑫; 胡泽宇 | 6h | 6h | 185.82 | 185.82 |
| 31 | 2.7.2 | WBS |  | 2h | 2017-10-27 19:00 A | 2017-10-27 21:00 A |  | 100% |  |  |  | start no earlier than 2017-10-27 08:00 | 林康 | 2h | 2h | 61.94 | 61.94 |
| 32 | 2.7.3 | 甘特图 |  | 3h | 2017-10-28 19:00 A | 2017-10-29 20:00 A |  | 100% |  |  |  | start no earlier than 2017-10-28 08:00 | 林康 | 3h | 3h | 92.91 | 92.91 |
| 33 | 2.7.4 | 提交需求工程计划 |  | 1h | 2017-10-29 19:00 A | 2017-10-29 20:00 A |  | 100% |  |  |  | start no earlier than 2017-10-29 08:00 |  |  |  |  |  |
| 34 | 2.8 | 小组例会4 |  | 0.5h | 2017-11-02 19:00 | 2017-11-02 19:30 |  |  |  | 22.25d |  | start no earlier than 2017-11-02 08:00 |  |  |  |  |  |
| 35 | 2.9 | **项目章程** |  | 0.25d | 2017-10-28 19:30 A | 2017-10-29 19:30 A | 25 | 100% |  |  |  |  |  | 1.5h | 1.5h | 46.45 | 46.45 |
| 36 | 2.9.1 | 编写项目章程 |  | 1.5h | 2017-10-28 19:30 A | 2017-10-28 21:00 A |  | 100% |  |  |  | start no earlier than 2017-10-27 08:00 | 金志超 | 1.5h | 1.5h | 46.45 | 46.45 |
| 37 | 2.9.2 | 项目章程提交 |  | 0.5h | 2017-10-29 19:00 A | 2017-10-29 19:30 A | 36 | 100% |  |  |  | start no earlier than 2017-10-29 08:00 |  |  |  |  |  |
| 38 | 2.10 | QA计划 制作 | milestone | 1.5h | 2017-11-05 19:00 A | 2017-11-05 20:30 A | 5 | 100% |  |  |  | start no earlier than 2017-11-05 08:00 | 金志超 | 1.5h | 1.5h | 46.45 | 46.45 |
| 39 | 2.11 | **修改评审详解项目需求计划** |  | 4.5d | 2017-10-30 19:00 A | 2017-11-16 21:00 | 29 | 50% | 2.25d | 18.56d |  |  |  | 8h | 8h | 247.76 | 247.76 |
| 40 | 2.11.1 | 修改需求工程计划 |  | 1h | 2017-10-30 19:00 A | 2017-10-30 20:00 A | 29 | 100% |  |  |  | start no earlier than 2017-10-30 08:00 | 韩佳鑫; 胡泽宇; 林康 | 3h | 3h | 92.91 | 92.91 |
| 41 | 2.11.2 | 评审需求工程计划 | milestone | 1h | 2017-11-04 19:00 A | 2017-11-04 20:00 A | 40 | 100% |  |  |  | start no earlier than 2017-11-04 08:00 | 葛鑫志; 韩佳鑫; 胡泽宇; 林康; 金志超 | 5h | 5h | 154.85 | 154.85 |
| 42 | 2.11.3 | 需求工程计划详解 |  | 2h | 2017-11-16 19:00 | 2017-11-16 21:00 | 41 |  |  | 18.56d |  | start no earlier than 2017-11-16 08:00 |  |  |  |  |  |
| 43 | 3 | **需求阶段** |  | 14.5d? | 2017-11-04 19:00 A | 2017-12-31 21:00 |  | 37% | 9.19d? | 1.31d | 0d |  |  | 429.09h | 180.59h | 13,288.92 | 5,592.87 |
| 44 | 3.1 | **需求开发过程** |  | 11d? | 2017-11-04 19:00 A | 2017-12-17 21:00 |  | 49% | 5.65d? | 4.81d |  |  |  | 296.59h | 180.59h | 9,185.39 | 5,592.87 |
| 45 | 3.1.1 | **需求获取** |  | 7.5d | 2017-11-04 19:00 A | 2017-12-03 21:00 |  | 73% | 2.06d | 2.12d | 0d |  |  | 195.59h | 175.09h | 6,057.42 | 5,422.54 |
| 46 | 3.1.1.1 | **编写项目视图与范围** |  | 0.37d | 2017-11-04 19:00 A | 2017-11-05 19:55 A |  | 100% |  |  |  |  |  | 4.59h | 4.59h | 142.15 | 142.15 |
| 47 | 3.1.1.1.1 | 确定业务需求 |  | 0.1h | 2017-11-04 19:00 A | 2017-11-04 19:06 A |  | 100% |  |  |  | start no earlier than 2017-11-04 08:00 | 韩佳鑫 | 0.1h | 0.1h | 3.1 | 3.1 |
| 48 | 3.1.1.1.2 | 确定范围与限制 |  | 0.33h | 2017-11-04 19:06 A | 2017-11-04 19:25 A | 47 | 100% |  |  |  | start no earlier than 2017-10-30 08:00 | 韩佳鑫; 葛鑫志; 胡泽宇 | 0.99h | 0.99h | 30.66 | 30.66 |
| 49 | 3.1.1.1.3 | 确定业务背景 |  | 0.5h | 2017-11-04 19:25 A | 2017-11-04 19:55 A | 48 | 100% |  |  |  | start no earlier than 2017-11-04 08:00 | 韩佳鑫 | 0.5h | 0.5h | 15.49 | 15.49 |
| 50 | 3.1.1.1.4 | 绘制关联图 |  | 2h | 2017-11-04 19:55 A | 2017-11-05 19:55 A | 49 | 100% |  |  |  | start no earlier than 2017-10-31 08:00 | 葛鑫志 | 2h | 2h | 61.94 | 61.94 |
| 51 | 3.1.1.1.5 | 使用业务目标来做范围决策 |  | 0.5h | 2017-11-05 19:00 A | 2017-11-05 19:30 A |  | 100% |  |  |  | start no earlier than 2017-11-05 08:00 | 韩佳鑫 | 0.5h | 0.5h | 15.49 | 15.49 |
| 52 | 3.1.1.1.6 | 评估范围变更的影响 |  | 0.5h | 2017-11-05 19:00 A | 2017-11-05 19:30 A |  | 100% |  |  |  | start no earlier than 2017-11-05 08:00 | 胡泽宇 | 0.5h | 0.5h | 15.49 | 15.49 |
| 53 | 3.1.1.1.7 | 小组例会5 |  | 0.5h | 2017-11-05 19:00 A | 2017-11-05 19:30 A |  | 100% |  |  |  | start no earlier than 2017-11-05 08:00 |  |  |  |  |  |

| ID | WBS | Task | Type | Duration | Start | Finish | Predecessors | Complete | Remaining | Total slack | Free slack | Constraint | Deadline | Resources | Work | Actual work | Cost | Actual cost |
| --- | --- | --- | --- | --- | --- | --- | --- | --- | --- | --- | --- | --- | --- | --- | --- | --- | --- | --- |
| 54 | 3.1.1.2 | **确定需求开发过程** |  | 5.81d | 2017-11-06 08:00 A | 2017-11-29 19:30 | 52 | 90% | 0.58d | 3.31d |  |  |  |  | 174h | 170.5h | 5,388.78 | 5,280.39 |
| 55 | 3.1.1.2.1 | 用户群分类 |  | 1h | 2017-11-06 19:00 A | 2017-11-06 20:00 A |  | 100% |  |  |  | start no earlier than 2017-11-06 08:00 |  | 韩佳鑫; 林康; 葛鑫志; 胡泽宇 | 4h | 4h | 123.88 | 123.88 |
| 56 | 3.1.1.2.2 | 选择产品代表 | milestone | 0h | 2017-11-06 08:00 A | 2017-11-06 08:00 A |  | 100% |  |  |  | start no earlier than 2017-11-06 08:00 |  | 金志超; 韩佳鑫; 林康; 葛鑫志; 胡泽宇 |  |  |  |  |
| 57 | 3.1.1.2.3 | 建立核心队伍 | milestone | 0h | 2017-11-06 08:00 A | 2017-11-06 08:00 A | 56 | 100% |  |  |  |  |  | 金志超; 韩佳鑫; 林康; 葛鑫志; 胡泽宇 |  |  |  |  |
| 58 | 3.1.1.2.4 | 需求获取技巧 | milestone | 0h | 2017-11-06 08:00 A | 2017-11-06 08:00 A |  | 100% |  |  |  | start no earlier than 2017-11-06 08:00 |  | 胡泽宇 |  |  |  |  |
| 59 | 3.1.1.2.5 | 制定需求获取计划 |  | 1h | 2017-11-06 20:00 A | 2017-11-07 17:00 A | 58 | 100% |  |  |  | finish no earlier than 2017-11-07 17:00 |  | 韩佳鑫 | 1h | 1h | 30.97 | 30.97 |
| 60 | 3.1.1.2.6 | 界面原型 |  | 33h | 2017-11-09 20:00 A | 2017-11-26 17:00 A | 59 | 100% |  |  |  | finish no earlier than 2017-11-12 17:00 |  | 林康; 金志超; 葛鑫志; 胡泽宇; 韩佳鑫 | 165h | 165h | 5,110.05 | 5,110.05 |
| 61 | 3.1.1.2.7 | 小组会议6 |  | 0.5h | 2017-11-12 19:00 A | 2017-11-12 19:30 A | 60 | 100% |  |  |  |  |  | 金志超 | 0.5h | 0.5h | 15.49 | 15.49 |
| 62 | 3.1.1.2.8 | 小组会议7 |  | 0.5h | 2017-11-16 08:00 A | 2017-11-16 19:30 A |  | 100% |  |  |  |  |  |  |  |  |  |  |
| 63 | 3.1.1.2.9 | 小组例会8 |  | 0.5h | 2017-11-19 19:00 | 2017-11-19 19:30 |  |  |  | 5.81d |  | start no earlier than 2017-11-19 08:00 |  |  |  |  |  |  |
| 64 | 3.1.1.2.10 | 执行需求活动 |  | 1h | 2017-11-27 19:00 | 2017-11-27 20:00 |  |  |  | 3.43d | 0d | start no earlier than 2017-11-27 08:00 |  | 韩佳鑫 | 1h |  | 30.97 |  |
| 65 | 3.1.1.2.11 | 需求获取后的跟进 |  | 0.5h | 2017-11-27 20:00 | 2017-11-27 20:30 | 64 |  |  | 3.43d | 0.06d | start no earlier than 2017-11-03 19:00 |  | 胡泽宇 | 0.5h |  | 15.49 |  |
| 66 | 3.1.1.2.12 | 对客户的输入进行分类 |  | 0.5h | 2017-11-28 19:00 | 2017-11-28 19:30 | 65 |  |  | 3.37d | 0d | start no earlier than 2017-11-28 08:00 |  | 林康 | 0.5h |  | 15.49 |  |
| 67 | 3.1.1.2.13 | 假设的需求和隐晦的需求 |  | 1h | 2017-11-28 19:30 | 2017-11-28 20:30 | 66 |  |  | 3.37d | 0.06d | start no earlier than 2017-11-04 08:00 |  | 金志超 | 1h |  | 30.97 |  |
| 68 | 3.1.1.2.14 | 找出遗漏的需求 |  | 0.5h | 2017-11-29 19:00 | 2017-11-29 19:30 | 67 |  |  | 3.31d |  | start no earlier than 2017-11-29 08:00 |  | 金志超 | 0.5h |  | 15.49 |  |
| 69 | 3.1.1.3 | 确定使用实例 |  | 2h | 2017-11-29 19:00 | 2017-11-29 21:00 | 57 |  |  | 3.12d |  | start no earlier than 2017-11-29 08:00 |  | 葛鑫志 | 2h |  | 61.94 |  |
| 70 | 3.1.1.4 | 召开应用程序开发联系会议（JAD） |  | 1.5h | 2017-11-29 19:00 | 2017-11-29 20:30 |  |  |  | 2.93d | 0d | start no earlier than 2017-11-29 08:00 |  | 韩佳鑫; 林康 | 3h |  | 92.91 |  |
| 71 | 3.1.1.5 | 分析用户工作流程 |  | 2h | 2017-11-29 20:30 | 2017-11-30 20:30 | 70 |  |  | 2.93d |  | start no earlier than 2017-11-06 08:00 |  | 韩佳鑫; 林康; 胡泽宇 | 6h |  | 185.82 |  |
| 72 | 3.1.1.6 | 小组例会9 |  | 0.5h | 2017-11-30 08:00 A | 2017-11-30 19:30 A |  | 100% |  |  |  | start no earlier than 2017-11-23 08:00 |  |  |  |  |  |  |
| 73 | 3.1.1.7 | 确定质量属性 |  | 4h | 2017-12-01 19:00 | 2017-12-02 21:00 | 17 |  |  | 2.12d | 0d | start no earlier than 2017-12-01 08:00 |  | 金志超 | 4h |  | 123.88 |  |
| 74 | 3.1.1.8 | 检查问题报告 |  | 0.5h | 2017-12-03 19:00 | 2017-12-03 19:30 | 73 |  |  | 2.12d | 0d | start no earlier than 2017-11-07 08:00 |  | 胡泽宇 | 0.5h |  | 15.49 |  |
| 75 | 3.1.1.9 | 需求重用 |  | 1.5h | 2017-12-03 19:30 | 2017-12-03 21:00 | 74 |  |  | 2.12d |  | finish no earlier than 2017-11-09 17:00 |  | 金志超 | 1.5h |  | 46.46 |  |
| 76 | 3.1.2 | **需求分析** |  | 1.06d? | 2017-12-01 08:00 A | 2017-12-05 19:30 | 45 | 53% | 0.5d? | 2.31d | 0d |  |  |  | 12h | 5.5h | 371.64 | 170.34 |
| 77 | 3.1.2.1 | 绘制关联图 |  | 1h | 2017-12-01 08:00 A | 2017-12-01 20:00 A |  | 100% |  |  |  | start no earlier than 2017-11-13 08:00 |  | 葛鑫志; 胡泽宇 | 2h | 2h | 61.94 | 61.94 |
| 78 | 3.1.2.2 | 创建开发原型 |  | 2h? | 2017-12-01 08:00 A | 2017-12-01 21:00 A | 77 | 100% |  |  |  | start no earlier than 2017-11-14 08:00 |  | 林康 | 2h | 2h | 61.94 | 61.94 |
| 79 | 3.1.2.3 | 分析可行性 |  | 1.5h? | 2017-12-01 08:00 A | 2017-12-01 20:30 A | 78 | 100% |  |  |  | start no earlier than 2017-11-15 08:00 |  | 韩佳鑫 | 1.5h | 1.5h | 46.46 | 46.46 |
| 80 | 3.1.2.4 | 小组例会10 |  | 0.5h | 2017-12-03 08:00 A | 2017-12-03 19:30 A |  | 100% |  |  |  | start no earlier than 2017-11-26 08:00 |  |  |  |  |  |  |
| 81 | 3.1.2.5 | 确定需求优先 |  | 0.5h | 2017-12-04 19:00 | 2017-12-04 19:30 |  |  |  | -2.06d | 0d | start no earlier than 2017-12-03 08:00 | 2017-11-26 17:00 | 葛鑫志 | 0.5h |  | 15.49 |  |
| 82 | 3.1.2.6 | 为需求建立模型 |  | 1h? | 2017-12-04 19:30 | 2017-12-04 20:30 | 81 |  |  | 2.31d | 0d | start no earlier than 2017-12-04 08:00 |  | 金志超; 林康 | 2h |  | 61.94 |  |
| 83 | 3.1.2.7 | 编写数据字典 |  | 1h? | 2017-12-04 20:30 | 2017-12-05 19:30 | 82 |  |  | 2.31d |  | start no earlier than 2017-11-18 08:00 |  | 金志超; 韩佳鑫 | 2h |  | 61.94 |  |
| 84 | 3.1.2.8 | 应用质量功能调配 |  | 2h? | 2017-12-04 19:00 | 2017-12-04 21:00 | 73 |  |  | 2.44d |  | start no earlier than 2017-12-04 08:00 |  | 胡泽宇 | 2h |  | 61.94 |  |

| ID | WBS | Task | Type | Duration | Start | Finish | Predecessors | Total slack | Free slack | Constraint | Resources | Work | Cost |
| --- | --- | --- | --- | --- | --- | --- | --- | --- | --- | --- | --- | --- | --- |
| 85 | 3.1.3 | **需求规格说明** |  | 1.31d? | 2017-12-05 19:30 | 2017-12-10 20:00 | 76 | 2.31d |  |  |  | 29h | 898.13 |
| 86 | 3.1.3.1 | 采用软件需求规格说明模板 |  | 4h? | 2017-12-05 19:30 | 2017-12-07 19:30 |  | 7.5d |  | finish no earlier than 2017-12-05 17:00 | 金志超; 葛鑫志 [50%] | 4h | 123.88 |
| 87 | 3.1.3.2 | 指明需求来源 |  | 1h? | 2017-12-05 19:30 | 2017-12-05 20:30 |  | 2.38d | 0d | start no earlier than 2017-12-05 08:00 | 韩佳鑫; 林康; 胡泽宇 | 3h | 92.91 |
| 88 | 3.1.3.3 | 为每一项需求注上标号 |  | 2h | 2017-12-05 20:30 | 2017-12-06 20:30 | 87 | 2.31d | 0d | finish no earlier than 2017-12-01 17:00 | 林康; 胡泽宇 | 4h | 123.88 |
| 89 | 3.1.3.4 | 记录业务规范 |  | 1h? | 2017-12-06 20:30 | 2017-12-07 19:30 | 88 | 2.31d | 0d | finish no earlier than 2017-11-30 17:00 | 金志超; 韩佳鑫 | 2h | 61.94 |
| 90 | 3.1.3.5 | 创建需求跟踪能力矩阵 |  | 2h? | 2017-12-07 19:30 | 2017-12-08 19:30 | 89 | 2.31d | 0d | finish no earlier than 2017-12-04 17:00 | 葛鑫志; 胡泽宇 | 4h | 123.88 |
| 91 | 3.1.3.6 | 小组例会11 |  | 0.5h | 2017-12-07 19:00 | 2017-12-07 19:30 |  | 7.5d |  | start no earlier than 2017-12-07 08:00 |  |  |  |
| 92 | 3.1.3.7 | 写软件需求规格说明书 | milestone | 4h | 2017-12-08 19:30 | 2017-12-10 19:30 | 90 | 2.31d | 0d | finish no earlier than 2017-12-10 17:00 | 金志超; 韩佳鑫; 林康 | 12h | 371.64 |
| 93 | 3.1.3.8 | 小组例会12 |  | 0.5h | 2017-12-10 19:00 | 2017-12-10 19:30 |  | 6.75d |  | start no earlier than 2017-12-10 08:00 |  |  |  |
| 94 | 3.1.3.9 | 提交软件需求规格说明（草稿） |  | 0.5h | 2017-12-10 19:30 | 2017-12-10 20:00 | 92 | 6.69d |  | start no earlier than 2017-12-10 08:00 |  |  |  |
| 95 | 3.1.4 | **需求规格审核** |  | 1.75d? | 2017-12-11 19:00 | 2017-12-17 21:00 | 76 | 1.94d | 0d |  |  | 60h | 1,858.2 |
| 96 | 3.1.4.1 | 审查需求文档 |  | 3h? | 2017-12-11 19:00 | 2017-12-12 20:00 | 92 | 2.12d | 0.12d | start no earlier than 2017-12-11 08:00 | 金志超; 韩佳鑫; 林康; 葛鑫志; 胡泽宇 | 15h | 464.55 |
| 97 | 3.1.4.2 | 编写测试用例 |  | 3h? | 2017-12-13 19:00 | 2017-12-14 20:00 | 96 | 2d | 0d | start no earlier than 2017-12-13 08:00 | 金志超; 韩佳鑫; 林康; 葛鑫志; 胡泽宇 | 15h | 464.55 |
| 98 | 3.1.4.3 | 小组例会13 |  | 0.5h | 2017-12-14 20:00 | 2017-12-14 20:30 | 97 | 2d | 0.06d | start no earlier than 2017-12-14 08:00 |  |  |  |
| 99 | 3.1.4.4 | 编写用户手册 |  | 2h? | 2017-12-15 19:00 | 2017-12-15 21:00 | 98 | 1.94d | 0d | start no earlier than 2017-12-15 08:00 | 金志超; 韩佳鑫; 林康; 葛鑫志; 胡泽宇 | 10h | 309.7 |
| 100 | 3.1.4.5 | 确定合格的标准 |  | 2h | 2017-12-16 19:00 | 2017-12-16 21:00 | 99 | 1.94d | 0d | start no earlier than 2017-12-16 08:00 | 金志超; 韩佳鑫; 林康; 葛鑫志; 胡泽宇 | 10h | 309.7 |
| 101 | 3.1.4.6 | 模拟需求 |  | 2h | 2017-12-17 19:00 | 2017-12-17 21:00 | 100 | 1.94d |  | start no earlier than 2017-12-17 08:00 | 金志超; 韩佳鑫; 林康; 葛鑫志; 胡泽宇 | 10h | 309.7 |
| 102 | 3.1.4.7 | 小组例会14 |  | 0.5h | 2017-12-17 19:00 | 2017-12-17 19:30 |  | 2.12d |  | start no earlier than 2017-12-17 08:00 |  |  |  |
| 103 | 3.2 | **需求管理过程** |  | 3.5d? | 2017-12-18 19:00 | 2017-12-31 21:00 | 95 | 1.31d |  |  |  | 132.5h | 4,103.52 |
| 104 | 3.2.1 | 使用需求管理工具 |  | 3h? | 2017-12-18 19:00 | 2017-12-19 20:00 |  | 1.94d | 0d | start no earlier than 2017-12-18 08:00 | 金志超; 韩佳鑫; 林康; 葛鑫志; 胡泽宇 | 15h | 464.55 |
| 105 | 3.2.2 | 小组例会19 |  | 0.5h | 2017-12-19 19:00 | 2017-12-19 19:30 |  | 4.5d |  | start no earlier than 2017-12-19 08:00 |  |  |  |
| 106 | 3.2.3 | 确定变更控制过程 |  | 3h? | 2017-12-19 20:00 | 2017-12-20 21:00 | 104 | 1.94d | 0d | start no earlier than 2017-12-19 08:00 | 金志超; 韩佳鑫; 林康; 葛鑫志; 胡泽宇 | 15h | 464.55 |
| 107 | 3.2.4 | 建立变更控制委员会 |  | 1h | 2017-12-21 19:00 | 2017-12-21 20:00 | 106 | 1.94d | 0d | start no earlier than 2017-12-20 08:00 | 金志超; 韩佳鑫; 林康; 葛鑫志; 胡泽宇 | 5h | 154.85 |
| 108 | 3.2.5 | 进行变更影响分析 |  | 3h? | 2017-12-21 20:00 | 2017-12-22 21:00 | 107 | 1.94d | 0d | start no earlier than 2017-12-21 08:00 | 金志超; 韩佳鑫; 林康; 葛鑫志; 胡泽宇 | 15h | 464.55 |
| 109 | 3.2.6 | 小组例会15 |  | 0.5h | 2017-12-21 19:00 | 2017-12-21 19:30 |  | 4d |  | start no earlier than 2017-12-21 08:00 |  |  |  |
| 110 | 3.2.7 | 小组例会20 |  | 0.5h | 2017-12-22 19:00 | 2017-12-22 19:30 |  | 3.75d |  | start no earlier than 2017-12-22 08:00 |  |  |  |
| 111 | 3.2.8 | 小组例会17 |  | 0.5h | 2017-12-28 19:00 | 2017-12-28 19:30 |  | 2.25d |  | start no earlier than 2017-12-28 08:00 |  |  |  |
| 112 | 3.2.9 | 小组例会18 |  | 0.5h | 2017-12-31 19:00 | 2017-12-31 19:30 |  | 1.5d |  | start no earlier than 2017-12-31 08:00 |  |  |  |

| ID | WBS | Task | Type | Duration | Start | Finish | Predecessors | Total slack | Free slack | Constraint | Resources | Work | Cost |
| --- | --- | --- | --- | --- | --- | --- | --- | --- | --- | --- | --- | --- | --- |
| 113 | 3.2.10 | **编写需求文档的基准版本和控制版本** |  | 0.5d? | 2017-12-23 19:00 | 2017-12-24 21:00 | 108 | 1.94d | 0d |  |  | 17.5h | 541.98 |
| 114 | 3.2.10.1 | 编写需求变更文档 |  | 3.5h? | 2017-12-23 19:00 | 2017-12-24 20:30 |  | 1.94d | 0d | start no earlier than 2017-12-23 08:00 | 金志超; 韩佳鑫; 林康; 葛鑫志; 胡泽宇 | 17.5h | 541.98 |
| 115 | 3.2.10.2 | 提交需求变更文档 |  | 0.5h? | 2017-12-24 20:30 | 2017-12-24 21:00 | 114 | 1.94d |  | start no earlier than 2017-12-24 08:00 |  |  |  |
| 116 | 3.2.10.3 | 小组例会16 |  | 0.5h | 2017-12-24 19:00 | 2017-12-24 19:30 |  | 2.12d |  | start no earlier than 2017-12-24 08:00 |  |  |  |
| 117 | 3.2.11 | 跟踪每一项变更 |  | 2h | 2017-12-25 19:00 | 2017-12-25 21:00 | 113 | 1.94d | 0d | start no earlier than 2017-12-25 08:00 | 金志超; 韩佳鑫; 林康; 葛鑫志; 胡泽宇 | 10h | 309.7 |
| 118 | 3.2.12 | 维护变更历史记录 |  | 2h | 2017-12-26 19:00 | 2017-12-26 21:00 | 117 | 1.94d | 0d | start no earlier than 2017-12-26 08:00 | 金志超; 韩佳鑫; 林康; 葛鑫志; 胡泽宇 | 10h | 309.7 |
| 119 | 3.2.13 | 跟踪需求状态 |  | 3h | 2017-12-27 19:00 | 2017-12-28 20:00 | 118 | 1.94d | 0.12d | start no earlier than 2017-12-27 08:00 | 金志超; 韩佳鑫; 林康; 葛鑫志; 胡泽宇 | 15h | 464.55 |
| 120 | 3.2.14 | 小组例会21 |  | 0.5h | 2017-12-28 19:00 | 2017-12-28 19:30 |  | 2.25d |  | start no earlier than 2017-12-28 08:00 |  |  |  |
| 121 | 3.2.15 | 衡量需求稳定性 |  | 2h | 2017-12-29 19:00 | 2017-12-29 21:00 | 119 | 1.81d |  | start no earlier than 2017-12-29 08:00 | 金志超; 林康; 葛鑫志; 胡泽宇; 韩佳鑫 | 10h | 309.7 |
| 122 | 3.2.16 | 软件需求变更文档修改及评审 | milestone | 4h | 2017-12-30 19:00 | 2017-12-31 21:00 | 113 | 1.31d |  | start no earlier than 2017-12-30 08:00 | 韩佳鑫; 葛鑫志; 胡泽宇; 金志超; 林康 | 20h | 619.4 |
| 123 | 3.2.17 | 小组例会22 |  | 0.5h | 2017-12-30 19:00 | 2017-12-30 19:30 |  | 1.75d |  | start no earlier than 2017-12-30 08:00 |  |  |  |
| 124 | 4 | **设计阶段** |  | 1.12d? | 2018-01-01 19:00 | 2018-01-05 20:00 |  | 1.31d | 0d |  |  | 42h | 1,300.74 |
| 125 | 4.1 | 概要设计 | milestone | 6h? | 2018-01-01 19:00 | 2018-01-03 21:00 | 43 | 1.31d | 0d | start no earlier than 2018-01-01 08:00 | 金志超; 韩佳鑫; 林康; 葛鑫志; 胡泽宇 | 30h | 929.1 |
| 126 | 4.2 | 接口设计 |  | 1h? | 2018-01-04 19:00 | 2018-01-04 20:00 | 125 | 1.31d | 0d | start no earlier than 2018-01-02 08:00 | 金志超; 韩佳鑫; 林康; 葛鑫志; 胡泽宇 | 5h | 154.85 |
| 127 | 4.3 | 软件结构 |  | 1h? | 2018-01-04 20:00 | 2018-01-04 21:00 | 126 | 1.31d | 0d | start no earlier than 2018-01-02 08:00 | 金志超; 韩佳鑫; 林康; 葛鑫志; 胡泽宇 | 5h | 154.85 |
| 128 | 4.4 | 数据库设计 |  | 1h? | 2018-01-05 19:00 | 2018-01-05 20:00 | 127 | 1.31d | 0d | start no earlier than 2018-01-02 08:00 | 金志超; 林康 | 2h | 61.94 |
| 129 | 5 | **实现阶段** |  | 0.44d? | 2018-01-05 20:00 | 2018-01-07 19:30 | 124 | 1.25d | 0.19d |  |  | 13h | 402.61 |
| 130 | 5.1 | 终端控制模块 |  | 1h? | 2018-01-05 20:00 | 2018-01-05 21:00 |  | 1.56d |  | start no earlier than 2018-01-03 08:00 | 韩佳鑫; 葛鑫志 | 2h | 61.94 |
| 131 | 5.2 | 小组例会23 |  | 0.5h | 2018-01-05 20:00 | 2018-01-05 20:30 |  | 1.62d |  | start no earlier than 2018-01-04 08:00 |  |  |  |
| 132 | 5.3 | 数据同步模块 |  | 1h? | 2018-01-05 20:00 | 2018-01-05 21:00 | 128 | 1.31d | 0d | start no earlier than 2018-01-04 08:00 | 胡泽宇 | 1h | 30.97 |
| 133 | 5.4 | 数据库实现模块 |  | 1h? | 2018-01-06 19:00 | 2018-01-06 20:00 | 132 | 1.31d | 0d | start no earlier than 2018-01-05 08:00 | 金志超; 韩佳鑫; 林康; 葛鑫志; 胡泽宇 | 5h | 154.85 |
| 134 | 5.5 | 后天管理中心控制模块 |  | 1h? | 2018-01-06 20:00 | 2018-01-06 21:00 | 133 | 1.31d |  | start no earlier than 2018-01-06 08:00 | 金志超; 韩佳鑫; 林康; 葛鑫志; 胡泽宇 | 5h | 154.85 |
| 135 | 5.6 | 小组例会24 |  | 0.5h | 2018-01-07 19:00 | 2018-01-07 19:30 |  | 1.25d |  | start no earlier than 2018-01-07 08:00 |  |  |  |
| 136 | 6 | **测试与维护** |  | 3.5d? | 2018-01-08 19:00 | 2018-01-21 21:00 | 129 | 0.06d | 0d |  |  | 115h | 3,561.55 |
| 137 | 6.1 | 测试计划 | milestone | 8h? | 2018-01-08 19:00 | 2018-01-11 21:00 | 124 | 1.06d | 0.25d | start no earlier than 2018-01-08 08:00 | 金志超; 韩佳鑫; 林康; 葛鑫志; 胡泽宇 | 40h | 1,238.8 |
| 138 | 6.2 | 小组例会25 |  | 0.5h | 2018-01-11 19:00 | 2018-01-11 19:30 |  | 2.75d |  | start no earlier than 2018-01-11 08:00 |  |  |  |
| 139 | 6.3 | 界面测试与数据确认测试 |  | 2h | 2018-01-13 19:00 | 2018-01-14 17:00 | 137 | 0.81d | 0.75d | finish no earlier than 2018-01-14 17:00 | 金志超; 韩佳鑫; 林康; 葛鑫志; 胡泽宇 | 10h | 309.7 |
| 140 | 6.4 | 小组例会26 |  | 0.5h | 2018-01-14 19:00 | 2018-01-14 19:30 |  | 2d |  | start no earlier than 2018-01-14 08:00 |  |  |  |
| 141 | 6.5 | 接口测试与代码走读 |  | 1h | 2018-01-15 19:00 | 2018-01-15 20:00 | 137 | 0.44d | 0.38d | start no earlier than 2018-01-15 08:00 | 金志超; 韩佳鑫; 林康; 葛鑫志; 胡泽宇 | 5h | 154.85 |
| 142 | 6.6 | 集成测试 |  | 2h? | 2018-01-16 19:00 | 2018-01-16 21:00 | 137 | 0.06d | 0d | start no earlier than 2018-01-16 08:00 | 金志超; 韩佳鑫; 林康; 葛鑫志; 胡泽宇 | 10h | 309.7 |
| 143 | 6.7 | 测试报告书 |  | 2h? | 2018-01-17 19:00 | 2018-01-17 21:00 | 141, 142, 139 | 0.06d | 0d | start no earlier than 2018-01-17 08:00 | 金志超; 韩佳鑫; 林康; 葛鑫志; 胡泽宇 | 10h | 309.7 |
| 144 | 6.8 | 小组例会27 |  | 0.5h | 2018-01-18 19:00 | 2018-01-18 19:30 |  | 1d |  | start no earlier than 2018-01-18 08:00 |  |  |  |
| 145 | 6.9 | 系统维护计划 | milestone | 8h? | 2018-01-18 19:00 | 2018-01-21 21:00 | 143 | 0.06d |  | start no earlier than 2018-01-18 08:00 | 金志超; 韩佳鑫; 林康; 葛鑫志; 胡泽宇 | 40h | 1,238.8 |
| 146 | 6.10 | 小组例会28 |  | 0.5h | 2018-01-21 19:00 | 2018-01-21 19:30 |  | 0.25d |  | start no earlier than 2018-01-21 08:00 |  |  |  |

| ID | WBS | Task | Type | Duration | Start | Finish | Predecessors | Total slack | Free slack | Constraint | Resources | Work | Cost |
| --- | --- | --- | --- | --- | --- | --- | --- | --- | --- | --- | --- | --- | --- |
| 147 | 7 | **项目交付与技术支持** |  | 2.06d? | 2018-01-22 19:00 | 2018-01-30 19:30 |  | 0d |  |  |  | 77.5h | 2,400.18 |
| 148 | 7.1 | 培训计划 |  | 2h? | 2018-01-22 19:00 | 2018-01-22 21:00 | 136 | 0.06d | 0d | start no earlier than 2018-01-22 08:00 | 金志超; 韩佳鑫; 林康; 葛鑫志; 胡泽宇 | 10h | 309.7 |
| 149 | 7.2 | 用户使用手册 |  | 2h? | 2018-01-23 19:00 | 2018-01-23 21:00 | 148 | 0.06d | 0d | start no earlier than 2018-01-23 08:00 | 金志超; 韩佳鑫; 林康; 葛鑫志; 胡泽宇 | 10h | 309.7 |
| 150 | 7.3 | 安装部署计划 | milestone | 5h? | 2018-01-24 19:00 | 2018-01-26 20:00 | 149 | 0.06d | 0d | start no earlier than 2018-01-24 08:00 | 金志超; 韩佳鑫; 林康; 葛鑫志; 胡泽宇 | 25h | 774.25 |
| 151 | 7.4 | 小组例会29 |  | 0.5h | 2018-01-26 20:00 | 2018-01-26 20:30 | 150 | 0.06d | 0d | start no earlier than 2018-01-25 08:00 |  |  |  |
| 152 | 7.5 | 项目总结报告 | milestone | 6h? | 2018-01-26 20:30 | 2018-01-29 20:30 | 151 | 0.06d |  |  | 韩佳鑫; 林康; 葛鑫志; 胡泽宇; 金志超 | 30h | 929.1 |
| 153 | 7.6 | 小组总结会议 |  | 0.5h | 2018-01-30 19:00 | 2018-01-30 19:30 | 152 | 0d |  | start no earlier than 2018-01-30 08:00 | 金志超; 韩佳鑫; 林康; 葛鑫志; 胡泽宇 | 2.5h | 77.43 |
